# KHANS CONS

Schedule from Primavera P6, 2010-02-20 to 2010-05-19, data date 2010-02-20, costs in INR.

## Calendars

- 6 days a week: Mon-Sat 08:00-16:00; Sun off.

## Resources

| Resource | Group | Unit | Rate |
| --- | --- | --- | --- |
| CIVIL ENGINEERS | labor |  | 60 |
| Painter | labor |  | 35 |
| Female Helper | labor |  | 20 |
| Male Helper | labor |  | 30 |
| Door Frames 2 3/4 | material | NOS | 2500 |
| JCB | equipment |  | 550 |
| 43 g BIRLA CEMENT | material | BAG | 155 |
| SAND | material | BRASS | 1500 |
| 20 MM DOWN SIZE | material | BRASS | 1200 |
| 12 mm TOR STEEL | material | MT | 32000 |
| Murrum | material | BRASS | 800 |
| 53 G BIRLA CEMENT | material | BAG | 190 |
| 40 MM DOWN GRADE | material | BRASS | 800 |
| 25 mm TOR STEEL | material | MT | 32000 |
| 16 mm TOR STEEL | material | MT | 32000 |

## Schedule

| ID | WBS | Activity | Duration | Start | Finish | Predecessors | Total float | Free float | Resources | Cost | Responsibility |
| --- | --- | --- | --- | --- | --- | --- | --- | --- | --- | --- | --- |
|  | RE | **RESC** |  | 2010-02-20 | 2010-05-12 |  |  |  |  |  |  |
| REARCH01 |  | Architechtural planning | 5d | 2010-02-20 | 2010-02-25 |  | 0d |  |  |  | GEN |
| REARCH04 |  | Doors & Windows | 1d | 2010-02-20 | 2010-02-20 |  | 38d |  | CIVIL ENGINEERS [8 h]; Male Helper [8 h]; Door Frames 2 3/4 [8 NOS] | 20,720 | GEN |
| REARCH05 |  | Painting | 6d | 2010-02-20 | 2010-02-26 |  | 66d | 50d | Painter [48 h]; Male Helper [48 h]; Female Helper [48 h] | 4,080 | GEN |
| RECONS03 |  | Excavation | 6d | 2010-02-20 | 2010-02-26 |  | 19d | 0d | CIVIL ENGINEERS [48 h]; Male Helper [48 h]; Female Helper [48 h]; JCB [48 h] | 31,680 | GEN |
| REPLBE02 |  | Gully/ Nani trap fixing | 4d | 2010-02-20 | 2010-02-24 |  | 69d | 44d |  |  | CIV |
| RECONS04 |  | RCC Footing | 4d | 2010-02-22 | 2010-02-25 | RECONS03 SS+1d | 19d |  | CIVIL ENGINEERS [32 h]; Male Helper [32 h]; 43 g BIRLA CEMENT [32 BAG]; SAND [32 BRASS]; 20 MM DOWN SIZE [32 BRASS]; 12 mm TOR STEEL [32 MT] | 1,118,240 | GEN |
| REARCH02 |  | RCC Planning & Design | 5d | 2010-02-26 | 2010-03-03 | REARCH01 | 0d |  | CIVIL ENGINEERS [40 h] | 2,400 | GEN |
| RECONS01 |  | Building Layout | 2d | 2010-03-12 | 2010-03-13 | REARCH02 FS+7d | 0d |  | CIVIL ENGINEERS [16 h]; Male Helper [16 h]; Female Helper [16 h] | 1,760 | GEN |
| RECONS02 |  | Site Office | 2d | 2010-03-13 | 2010-03-15 | RECONS01 FS-1d | 0d |  | CIVIL ENGINEERS [16 h]; Male Helper [16 h]; Female Helper [16 h] | 1,760 | GEN |
| RECONS05 |  | RCC Column & Plinth Beam | 8d | 2010-03-16 | 2010-03-24 | RECONS02 SS+2d, RECONS04 SS, RECONS02 FF+1d, RECONS04 FF | 0d |  | CIVIL ENGINEERS [64 h]; Male Helper [64 h]; 43 g BIRLA CEMENT [64 BAG]; SAND [64 BRASS]; 20 MM DOWN SIZE [64 BRASS]; 12 mm TOR STEEL [64 MT] | 2,236,480 | GEN |
| RECONS06 |  | Murrum filling & Ramming | 3d | 2010-03-25 | 2010-03-27 | RECONS05 | 0d |  | CIVIL ENGINEERS [24 h]; Male Helper [24 h]; Female Helper [24 h]; Murrum [24 BRASS] | 21,840 | GEN |
| RECONS07 |  | Floor PCC | 2d | 2010-03-29 | 2010-03-30 | RECONS06 | 0d |  | CIVIL ENGINEERS [16 h]; Male Helper [16 h]; Female Helper [16 h]; 53 G BIRLA CEMENT [16 BAG]; SAND [16 BRASS]; 40 MM DOWN GRADE [16 BRASS] | 41,600 | GEN |
| RECONS08 |  | 1st Floor Columns | 6d | 2010-03-31 | 2010-04-06 | RECONS07 | 0d |  | CIVIL ENGINEERS [48 h]; Male Helper [48 h]; Female Helper [48 h]; 43 g BIRLA CEMENT [48 BAG]; SAND [48 BRASS]; 40 MM DOWN GRADE [48 BRASS]; 25 mm TOR STEEL [60 MT] | 2,043,120 | GEN |
| RECONS09 |  | 2nd Floor Columns | 3d | 2010-04-07 | 2010-04-09 | RECONS08 | 0d |  | CIVIL ENGINEERS [24 h]; Male Helper [24 h]; 43 g BIRLA CEMENT [24 BAG]; SAND [24 BRASS]; 40 MM DOWN GRADE [24 BRASS]; 16 mm TOR STEEL [24 MT] | 830,520 | GEN |
| RECONS10 |  | Ground Floor Brickwork | 3d | 2010-04-09 | 2010-04-12 | REARCH04 FS+2d, RECONS09 SS+2d | 0d |  |  |  | GEN |
| RECONS11 |  | 1st Floor Brickwork | 4d | 2010-04-13 | 2010-04-16 | RECONS10 | 0d |  |  |  | GEN |
| RECONS13 |  | D&W Frame fixing | 2d | 2010-04-14 | 2010-04-15 | RECONS11 SS+1d | 0d |  |  |  | GEN |
| REPLBE03 |  | Sewer Inspection chambers | 2d | 2010-04-15 | 2010-04-17 | REPLBE01 SF, REPLBE02 SS, REPLBE02 FF | 25d | 0d |  |  | CIV |
| RECONS14 |  | Internal Neeru Plaster | 5d | 2010-04-16 | 2010-04-21 | RECONS13 | 0d |  |  |  | GEN |
| RECONS12 |  | 2nd Floor Brickwork | 5d | 2010-04-17 | 2010-04-22 | RECONS11 | 23d |  |  |  | GEN |
| REPLBE01 |  | Vitrified clay sewage pipe laying | 2d | 2010-04-17 | 2010-04-19 | RECONS11 | 25d | 0d |  |  | CIV |
| RECONS15 |  | External sand dash plaster | 4d | 2010-04-22 | 2010-04-26 | RECONS14 | 0d |  |  |  | GEN |
| RECONS16 |  | Marbonite flooring & skirting | 5d | 2010-04-22 | 2010-04-27 | RECONS14 | 19d |  |  |  | GEN |
| RECONS17 |  | Kota flooring & skirting | 7d | 2010-04-22 | 2010-04-29 | RECONS14 | 17d |  |  |  | GEN |
| RECONS18 |  | Glazed tiling for Toilets & Kitchen | 8d | 2010-04-22 | 2010-04-30 | RECONS14 | 16d |  |  |  | GEN |
| REELEC01 |  | Internal wiring with casing | 6d | 2010-04-27 | 2010-05-03 | RECONS15 | 0d |  |  |  | GEN |
| REPLBI01 |  | 1" G.I w/c pipe laying | 3d | 2010-04-27 | 2010-04-29 | RECONS15 | 7d | 0d |  |  | ELE |
| REPLBI02 |  | 1/2" G.I w/c pipe laying | 2d | 2010-04-29 | 2010-04-30 | REPLBI01 FS-1d | 7d | 0d |  |  | ELE |
| REPLBG01 |  | Garden pipe laying | 3d | 2010-05-03 | 2010-05-05 | REPLBI02 FS+1d | 7d |  |  |  | CIV |
| REELEC02 |  | 3 Phase Wiring | 3d | 2010-05-05 | 2010-05-07 | REELEC01 FS+1d | 0d |  |  |  | ELE |
| REARCH03 |  | Internal Painting | 4d | 2010-05-08 | 2010-05-12 | REELEC02 | 0d |  | Painter [32 h]; Female Helper [32 h]; Male Helper [32 h] | 2,720 | GEN |
| REELEC03 |  | Genset Installation | 2d | 2010-05-08 | 2010-05-10 | REELEC02 | 8d |  |  |  | ELE |

| ID | WBS | Activity | Duration | Start | Finish | Predecessors | Total float | Free float | Responsibility |
| --- | --- | --- | --- | --- | --- | --- | --- | --- | --- |
|  | RD | **ROAD** |  | 2010-02-20 | 2010-04-21 |  |  |  |  |
| RDARCH01 |  | Internal Road Layout | 3d | 2010-02-20 | 2010-02-23 |  | 44d | 0d | CIV |
| RDCONS01 |  | Cleaniing & Cutting | 3d | 2010-02-24 | 2010-02-26 | RDARCH01 | 44d | 0d | CIV |
| RDCONS02 |  | Rubble Filling GSB | 4d | 2010-02-26 | 2010-03-02 | RDCONS01 SS+2d, RDCONS01 FF+2d | 61d | 0d | CIV |
| RDCONS06 |  | Cross Dranage works clearing | 8d | 2010-02-27 | 2010-03-08 | RDCONS01 | 44d | 0d | CIV |
| RDCONS03 |  | WBM ( Laying & Rolling ) | 6d | 2010-03-01 | 2010-03-06 | RDCONS02 SS+2d, RDCONS02 FF+2d | 61d | 0d | CIV |
| RDCONS04 |  | BMM laying & Rolling | 4d | 2010-03-05 | 2010-03-09 | RDCONS03 SS+2d, RDCONS03 FF+2d | 61d | 0d | CIV |
| RDCONS05 |  | Wearing Course & Silcoat | 3d | 2010-03-06 | 2010-03-09 | RDCONS04 SS, RDCONS04 FF | 61d |  | CIV |
| RDCONS07 |  | CD Excavations | 2d | 2010-03-09 | 2010-03-10 | RDCONS06 | 44d | 0d | CIV |
| RDCONS08 |  | CD PCC | 2d | 2010-03-11 | 2010-03-12 | RDCONS07 | 44d | 0d | CIV |
| RDCONS09 |  | 1m dia Hume Pipe | 1d | 2010-03-17 | 2010-03-17 | RDCONS08 FS+3d | 44d | 0d | CIV |
| RDCONS10 |  | CD Refilling, Ramming PCC | 2d | 2010-03-19 | 2010-03-20 | RDCONS09 FS+1d | 44d | 0d | CIV |
| RDARCH03 |  | Road Signage | 2d | 2010-03-22 | 2010-03-23 | RDCONS10 | 49d |  | CIV |
| RDCONS11 |  | Curb Laying | 7d | 2010-03-22 | 2010-03-29 | RDCONS10 | 44d |  | CIV |
| RDARCH02 |  | Curb Painting | 2d | 2010-04-19 | 2010-04-21 | REPLBE03 FS+1d, RDCONS10 | 25d |  | CIV |
|  | LS | **LSCP** |  | 2010-02-20 | 2010-05-19 |  |  |  |  |
| LSARCH01 |  | Landscaping & Planning | 2d | 2010-02-20 | 2010-02-22 |  | 65d | 4d | GEN |
| LSARCH02 |  | Land Profile Marking | 6d | 2010-02-20 | 2010-02-26 |  | 61d | 0d | ARC |
| LSCONS01 |  | Earth Filling & Cutting | 8d | 2010-03-01 | 2010-03-09 | LSARCH01 FS+1d, LSARCH02 FS+1d | 61d |  | CIV |
| LSCONS03 |  | Site Cleaning | 4d | 2010-04-27 | 2010-04-30 | REARCH05, RDCONS10, LSARCH02, RECONS15 | 16d |  | CIV |
| LSCONS02 |  | Plantation | 5d | 2010-05-14 | 2010-05-19 | REARCH03 FS+1d, REPLBG01 | 0d |  | CIV |

## Activity codes

| Code | Value | Meaning |
| --- | --- | --- |
| Responsibility | ARC | MILIND |
| Responsibility | CIV | Suhas |
| Responsibility | ELE | Ramesh |
| Responsibility | GEN | RAJIV |
