Schedule from MS Project, 2024-11-25 to 2027-04-30, A marks actual dates.

## Calendars

- Standard: Mon-Fri 08:00-12:00, 13:00-17:00; Sat-Sun off.

## Schedule

| ID | WBS | Task | Type | Duration | Start | Finish | Predecessors | Complete | Remaining | Total slack | Free slack | Constraint |
| --- | --- | --- | --- | --- | --- | --- | --- | --- | --- | --- | --- | --- |
| 1 | 1 | **Contractual Items** |  | 37d | 2024-11-25 A | 2025-01-14 A |  | 100% |  |  |  |  |
| 2 | 1.1 | Notice of Award |  | 1d | 2024-11-25 A | 2024-11-25 A |  | 100% |  |  |  | start no earlier than 2024-11-25 |
| 3 | 1.2 | Execute Cal Water Agreement |  | 1d | 2025-01-13 A | 2025-01-13 A | 2 | 100% |  |  |  | finish no earlier than 2025-01-13 |
| 4 | 1.3 | Notice to Proceed |  | 1d | 2025-01-13 A | 2025-01-13 A | 3FF | 100% |  |  |  | start no earlier than 2024-12-30 |
| 5 | 1.4 | WML Executes Contracts with Design Team |  | 1d | 2025-01-14 A | 2025-01-14 A | 4 | 100% |  |  |  | finish no earlier than 2025-01-14 |
| 6 | 2 | **Package 1** |  | 608d | 2025-01-01 A | 2027-04-30 |  | 43% | 347.05d | 0d |  |  |
| 7 | 2.1 | **Design** |  | 560d | 2025-01-01 A | 2027-02-23 |  | 76% | 136.24d | 48d |  |  |
| 8 | 2.1.1 | Conduct Site Visits |  | 28d | 2025-01-01 A | 2025-02-07 A |  | 100% |  |  |  | start no earlier than 2025-01-30 |
| 9 | 2.1.2 | Kickoff Meeting |  | 1d | 2025-03-20 A | 2025-03-20 A |  | 100% |  |  |  | start no earlier than 2025-03-20 |
| 10 | 2.1.3 | **Utility Coordination by Owner** |  | 252d | 2025-01-14 A | 2025-12-31 |  | 93% | 17.11d | 347d |  |  |
| 11 | 2.1.3.1 | Meeting with City of Bakersfield Planning Department | manual | 1d | 2025-02-21 A | 2025-02-21 A |  | 100% |  |  |  | start no earlier than 2025-03-10 |
| 12 | 2.1.3.2 | Meeting with City of Bakersfield Public Works Department | manual | 1d | 2025-02-21 A | 2025-02-21 A |  | 100% |  |  |  | start no earlier than 2025-03-11 |
| 13 | 2.1.3.3 | Meeting with Kern County Planning Department | manual | 1d | 2025-02-21 A | 2025-02-21 A |  | 100% |  |  |  |  |
| 14 | 2.1.3.4 | Meeting with Kern County Public Works Department | manual | 1d | 2025-02-21 A | 2025-02-21 A |  | 100% |  |  |  |  |
| 15 | 2.1.3.5 | Owner Coordination with Utilities for Relocation BK-W-010 |  | 150d | 2025-01-14 A | 2025-08-11 A | 4 | 100% |  |  |  |  |
| 16 | 2.1.3.6 | Owner Coordination with Utilities for Relocation BK-W-040 |  | 150d | 2025-01-14 A | 2025-08-11 A | 4 | 100% |  |  |  |  |
| 17 | 2.1.3.7 | Owner Coordination with Utilities for Relocation BK-W-062 |  | 150d | 2025-01-14 A | 2025-08-11 A | 4 | 100% |  |  |  |  |
| 18 | 2.1.3.8 | Owner Coordination with Utilities for Relocation ARD-W-018 |  | 150d | 2025-06-05 A | 2025-12-31 | 4 | 73% | 41d | 347d |  | finish no earlier than 2025-12-31 |
| 19 | 2.1.4 | **Utility Coordination by DB Team** |  | 197d | 2025-02-21 A | 2025-11-24 |  | 93% | 14.07d | 374d |  |  |
| 20 | 2.1.4.1 | Coordination with City of Bakersfield Planning Department |  | 196d | 2025-02-21 A | 2025-11-24 | 11 | 93% | 14d | 374d |  | finish no earlier than 2025-11-24 |
| 21 | 2.1.4.2 | Coordination with City of Bakersfield Public Works Department |  | 196d | 2025-02-21 A | 2025-11-24 | 12 | 93% | 14d | 374d |  | finish no earlier than 2025-11-24 |
| 22 | 2.1.4.3 | Coordination with Kern County Planning Department |  | 196d | 2025-02-21 A | 2025-11-24 | 13 | 93% | 14d | 374d |  | finish no earlier than 2025-11-24 |
| 23 | 2.1.4.4 | Coordination with Kern County Public Works Department |  | 196d | 2025-02-21 A | 2025-11-24 | 14 | 93% | 14d | 374d |  | finish no earlier than 2025-11-24 |
| 24 | 2.1.5 | **Owner Furnish Carbon Vessel Shipments** |  | 215d | 2026-04-29 | 2027-02-23 |  |  |  | 48d |  |  |
| 25 | 2.1.5.1 | BK-047-02 (Group 1) |  | 5d | 2026-04-29 | 2026-05-05 |  |  |  | 220d | 0d | start no earlier than 2026-04-29 |
| 26 | 2.1.5.2 | BK-W-145-01 (Group 1) |  | 5d | 2026-05-13 | 2026-05-19 |  |  |  | 205d | 0d | start no earlier than 2026-05-13 |
| 27 | 2.1.5.3 | BKNG-W-188-01 (Group 1) |  | 5d | 2026-06-10 | 2026-06-16 |  |  |  | 228d |  | start no earlier than 2026-06-10 |
| 28 | 2.1.5.4 | BK-W-002-10 (Group 2) |  | 5d | 2026-06-24 | 2026-06-30 |  |  |  | 165d | 0d | start no earlier than 2026-06-24 |
| 29 | 2.1.5.5 | BK-W-184-01 (Group 1) |  | 5d | 2026-07-08 | 2026-07-14 |  |  |  | 162d | 0d | start no earlier than 2026-07-08 |
| 30 | 2.1.5.6 | BK-W-077-02 (Group 2) |  | 5d | 2026-08-05 | 2026-08-11 |  |  |  | 131d | 35d | start no earlier than 2026-08-05 |
| 31 | 2.1.5.7 | BK-W-42 (Group 4) |  | 5d | 2026-08-17 | 2026-08-21 |  |  |  | 112d | 5d | start no earlier than 2026-08-17 |
| 32 | 2.1.5.8 | BK-W-089-01 (Group 2) |  | 5d | 2026-08-19 | 2026-08-25 |  |  |  | 112d | 42d | start no earlier than 2026-08-19 |
| 33 | 2.1.5.9 | BK-W-010-02 (Group 3) |  | 5d | 2026-09-02 | 2026-09-08 |  |  |  | 108d | 0d | start no earlier than 2026-09-02 |
| 34 | 2.1.5.10 | BK-W-130 (Group 4) |  | 5d | 2026-09-15 | 2026-09-21 |  |  |  | 91d | 7d | start no earlier than 2026-09-15 |
| 35 | 2.1.5.11 | BK-W-157-01 (Group 2) |  | 5d | 2026-09-16 | 2026-09-22 |  |  |  | 99d | 49d | start no earlier than 2026-09-16 |
| 36 | 2.1.5.12 | BK-158-01 (Group 2) |  | 5d | 2026-10-14 | 2026-10-20 |  |  |  | 75d | 0d | start no earlier than 2026-10-14 |
| 37 | 2.1.5.13 | BK-W-007-07 (Group 2) |  | 5d | 2026-10-28 | 2026-11-03 |  |  |  | 62d | 0d | start no earlier than 2026-10-28 |
| 38 | 2.1.5.14 | ARD-018-01 (Group 6) |  | 5d | 2026-10-28 | 2026-11-03 |  |  |  | 78d | 0d | start no earlier than 2026-10-28 |
| 39 | 2.1.5.15 | BK-W-040-02 (Group 3) |  | 5d | 2026-11-11 | 2026-11-17 |  |  |  | 61d | 0d | start no earlier than 2026-11-11 |
| 40 | 2.1.5.16 | BK-W-043-02 (Group 2) |  | 5d | 2026-11-25 | 2026-12-01 |  |  |  | 59d | 0d | start no earlier than 2026-11-25 |
| 41 | 2.1.5.17 | BK-W-105-01 (Group 2) |  | 5d | 2026-12-09 | 2026-12-15 |  |  |  | 39d | 0d | start no earlier than 2026-12-09 |
| 42 | 2.1.5.18 | BK-W-134-01 (Group 2) |  | 5d | 2026-12-23 | 2026-12-29 |  |  |  | 37d | 0d | start no earlier than 2026-12-23 |
| 43 | 2.1.5.19 | BK-W-149-01 (Group 2) |  | 5d | 2027-01-06 | 2027-01-12 |  |  |  | 34d | 7d | start no earlier than 2027-01-06 |
| 44 | 2.1.5.20 | BK-W-150-01 (Group 2) |  | 5d | 2027-01-20 | 2027-01-26 |  |  |  | 24d | 0d | start no earlier than 2027-01-20 |
| 45 | 2.1.5.21 | BK-W-062-02 (Group 3) |  | 5d | 2027-02-17 | 2027-02-23 |  |  |  | 0d |  | start no earlier than 2027-02-17 |

| ID | WBS | Task | Duration | Start | Finish | Predecessors | Complete | Remaining | Total slack | Free slack | Constraint |
| --- | --- | --- | --- | --- | --- | --- | --- | --- | --- | --- | --- |
| 46 | 2.1.6 | **Group 1 (047, 145, 184, 188)** | 279d | 2025-01-15 A | 2026-02-09 |  | 83% | 46.5d | 319d |  |  |
| 47 | 2.1.6.1 | Group 1 - 50% Design Submittal | 71d | 2025-01-15 A | 2025-04-23 A | 5 | 100% |  |  |  | finish no earlier than 2025-04-23 |
| 48 | 2.1.6.2 | Group 1 - 50% Design Submittal Review/Workshops/Approval | 17d | 2025-04-23 A | 2025-05-16 A | 47 | 100% |  |  |  |  |
| 49 | 2.1.6.3 | Group 1 - DDW Review/Approval (CAL WATER TO COMPLETE) | 155d | 2025-05-19 A | 2025-12-19 | 48 | 86% | 21d | 355d |  | finish no earlier than 2025-12-19 |
| 50 | 2.1.6.4 | Group 1 - Conduct Soils Sampling and Reports | 10d | 2025-05-19 A | 2025-05-30 A | 48 | 100% |  |  |  | finish no earlier than 2025-05-30 |
| 51 | 2.1.6.5 | Group 1 - 70% Design Submittal | 46d | 2025-05-06 A | 2025-07-21 A | 48 | 100% |  |  |  |  |
| 52 | 2.1.6.6 | Group 1 - 70% Design Submittal Review/Workshops/Approval | 16d | 2025-07-22 A | 2025-08-12 A | 51 | 100% |  |  |  |  |
| 53 | 2.1.6.7 | Group 1 - Permitting Review/Approval | 30d | 2025-08-13 A | 2025-09-23 | 52 | 97% | 1d | 418d |  |  |
| 54 | 2.1.6.8 | Group 1 - 100% Design Submittal | 93d | 2025-08-13 A | 2025-12-19 | 52 | 77% | 21d | 27d | 0d | finish no earlier than 2025-12-19 |
| 55 | 2.1.6.9 | Group 1 - 100% Design Submittal Review/Workshops/Approval | 15d | 2025-12-22 | 2026-01-09 | 54 |  |  | 27d | 0d |  |
| 56 | 2.1.6.10 | Group 1 - Finalize IFC Documents | 20d | 2026-01-12 | 2026-02-06 | 55 |  |  | 27d | 0d |  |
| 57 | 2.1.6.11 | Group 1 - Start Construction Phase | 1d | 2026-02-09 | 2026-02-09 | 56 |  |  | 27d | 0d |  |
| 58 | 2.1.7 | **Group 2 (002, 007, 043, 077, 089, 105, 134, 149, 150, 157, 158)** | 279d | 2025-01-15 A | 2026-02-09 |  | 82% | 50.44d | 319d |  |  |
| 59 | 2.1.7.1 | Group 2 - 50% Design Submittal | 110d | 2025-01-15 A | 2025-06-17 A | 5 | 100% |  |  |  | start no earlier than 2025-01-15 |
| 60 | 2.1.7.2 | Group 2 - 50% Design Submittal Review/Workshops/Approval | 12d | 2025-06-18 A | 2025-07-03 A | 59 | 100% |  |  |  |  |
| 61 | 2.1.7.3 | Group 2 - DDW Review/Approval (CAL WATER TO COMPLETE) | 121d | 2025-07-04 A | 2025-12-19 | 60 | 83% | 21d | 355d |  | finish no earlier than 2025-12-19 |
| 62 | 2.1.7.4 | Group 2 - Conduct Soils Sampling and Reports | 15d | 2025-07-04 A | 2025-07-24 A | 60 | 100% |  |  |  |  |
| 63 | 2.1.7.5 | Group 2 - 70% Design Submittal | 8d | 2025-07-03 A | 2025-07-25 A | 60 | 100% |  |  |  | finish no earlier than 2025-07-24 |
| 64 | 2.1.7.6 | Group 2 -70% Design Submittal Review/Workshops/Approval | 12d | 2025-07-28 A | 2025-08-12 A | 63 | 100% |  |  |  |  |
| 65 | 2.1.7.7 | Group 2 - Permitting Review/Approval | 30d | 2025-08-13 A | 2025-09-23 | 64 | 97% | 1d | 418d |  |  |
| 66 | 2.1.7.8 | Group 2 - 100% Design Submittal | 93d | 2025-08-13 A | 2025-12-19 | 64 | 77% | 21d | 99d | 0d | finish no earlier than 2025-12-19 |
| 67 | 2.1.7.9 | Group 2 - 100% Design Submittal Review/Workshops/Approval | 15d | 2025-12-22 | 2026-01-09 | 66 |  |  | 99d | 0d | finish no earlier than 2025-12-19 |
| 68 | 2.1.7.10 | Group 2 - Finalize IFC Documents | 20d | 2026-01-12 | 2026-02-06 | 67 |  |  | 99d | 0d |  |
| 69 | 2.1.7.11 | Group 2 - Start Construction Phase | 1d | 2026-02-09 | 2026-02-09 | 68 |  |  | 99d | 72d |  |

| ID | WBS | Task | Duration | Start | Finish | Predecessors | Complete | Remaining | Total slack | Free slack | Constraint |
| --- | --- | --- | --- | --- | --- | --- | --- | --- | --- | --- | --- |
| 70 | 2.1.8 | **Group 3 (010, 040, 062) OWNER UTILITY RELOCATION REQUIRED** | 329d | 2025-01-15 A | 2026-04-20 |  | 53% | 155.95d | 269d |  |  |
| 71 | 2.1.8.1 | Group 3 - 50% Design Submittal | 178d | 2025-01-15 A | 2025-09-19 A | 5 | 100% |  |  |  | finish no earlier than 2025-09-15 |
| 72 | 2.1.8.2 | Group 3 - 50% Design Submittal Review/Workshops/Approval | 24d | 2025-09-22 A | 2025-10-23 | 71 | 92% | 2d | 20d | 0d | finish no earlier than 2025-10-23 |
| 73 | 2.1.8.3 | Group 3 - DDW Review/Approval (CAL WATER TO COMPLETE) | 100d | 2025-10-24 A | 2026-03-12 | 72 | 20% | 80d | 296d |  | start no earlier than 2025-01-31 |
| 74 | 2.1.8.4 | Group 3 - Conduct Soils Sampling and Reports | 3d | 2025-10-24 A | 2025-10-28 A | 72 | 100% |  |  |  |  |
| 75 | 2.1.8.5 | Group 3 - 70% Design Submittal | 31d | 2025-10-24 A | 2025-12-05 | 15, 16, 17, 72 | 65% | 11d | 84d | 0d | finish no earlier than 2025-12-05 |
| 76 | 2.1.8.6 | Group 3 - 70% Design Submittal Review/Workshops/Approval | 15d | 2025-12-08 | 2025-12-26 | 75 |  |  | 84d | 0d | start no earlier than 2025-01-31 |
| 77 | 2.1.8.7 | Group 3 - Permitting Review/Approval | 30d | 2025-12-29 | 2026-02-06 | 76 |  |  | 320d |  | start no earlier than 2025-01-31 |
| 78 | 2.1.8.8 | Group 3 - 100% Design Submittal | 45d | 2025-12-29 | 2026-02-27 | 76 |  |  | 84d | 0d | start no earlier than 2025-01-31 |
| 79 | 2.1.8.9 | Group 3 - 100% Design Submittal Review/Workshops/Approval | 15d | 2026-03-02 | 2026-03-20 | 78 |  |  | 84d | 0d | start no earlier than 2025-01-31 |
| 80 | 2.1.8.10 | Group 3 - Finalize IFC Documents | 20d | 2026-03-23 | 2026-04-17 | 79 |  |  | 84d | 0d | start no earlier than 2025-01-31 |
| 81 | 2.1.8.11 | Group 3 - Start Construction Phase | 1d | 2026-04-20 | 2026-04-20 | 80 |  |  | 84d | 0d | start no earlier than 2025-01-31 |
| 82 | 2.1.9 | **Group 4 (042, 130) RESUME WORK PER CAL WATER - 5-6-25** | 250d | 2025-05-06 A | 2026-04-20 |  | 43% | 142.95d | 269d |  |  |
| 83 | 2.1.9.1 | Group 4 - 50% Design Submittal | 104d | 2025-05-06 A | 2025-09-26 A |  | 100% |  |  |  | finish no earlier than 2025-09-26 |
| 84 | 2.1.9.2 | Group 4 - 50% Design Submittal Review/Workshops/Approval | 19d | 2025-09-29 A | 2025-10-23 | 83 | 89% | 2d | 20d | 0d | finish no earlier than 2025-10-23 |
| 85 | 2.1.9.3 | Group 4 - DDW Review/Approval (CAL WATER TO COMPLETE) | 100d | 2025-10-24 A | 2026-03-12 | 84 | 20% | 80d | 296d |  |  |
| 86 | 2.1.9.4 | Group 4 - Conduct Soils Sampling and Reports | 3d | 2025-10-24 A | 2025-10-28 A | 84 | 100% |  |  |  |  |
| 87 | 2.1.9.5 | Group 4 - 70% Design Submittal | 31d | 2025-10-24 A | 2025-12-05 | 84 | 65% | 11d | 269d | 0d | finish no earlier than 2025-12-05 |
| 88 | 2.1.9.6 | Group 4 - 70% Design Submittal Review/Workshops/Approval | 15d | 2025-12-08 | 2025-12-26 | 87 |  |  | 269d | 0d |  |
| 89 | 2.1.9.7 | Group 4 - Permitting Review/Approval | 30d | 2025-12-29 | 2026-02-06 | 88 |  |  | 320d |  |  |
| 90 | 2.1.9.8 | Group 4 - 100% Design Submittal | 45d | 2025-12-29 | 2026-02-27 | 88 |  |  | 269d | 0d |  |
| 91 | 2.1.9.9 | Group 4 - 100% Design Submittal Review/Workshops/Approval | 15d | 2026-03-02 | 2026-03-20 | 90 |  |  | 269d | 0d |  |
| 92 | 2.1.9.10 | Group 4 - Finalize IFC Documents | 20d | 2026-03-23 | 2026-04-17 | 91 |  |  | 269d | 0d |  |
| 93 | 2.1.9.11 | Group 4 - Start Construction Phase | 1d | 2026-04-20 | 2026-04-20 | 92 |  |  | 269d |  |  |
| 94 | 2.1.10 | Group 5 (142, 196) REMOVED FROM CONTRACT PER CAL WATER - 5-6-25 | 1d | 2025-05-06 A | 2025-05-06 A |  | 100% |  |  |  | start no earlier than 2025-05-06 |
| 95 | 2.1.11 | Group 6 (Arden 018) ON HOLD PENDING DIRECTION FROM CAL WATER - 7-31-25 | 1d | 2025-07-31 A | 2025-07-31 A |  | 100% |  |  |  | start no earlier than 2025-07-31 |

| ID | WBS | Task | Duration | Start | Finish | Predecessors | Complete | Remaining | Total slack | Free slack |
| --- | --- | --- | --- | --- | --- | --- | --- | --- | --- | --- |
| 96 | 2.2 | **Material Procurement** | 140d | 2025-08-13 A | 2026-02-24 |  | 19% | 113.4d | 308d |  |
| 97 | 2.2.1 | Procure Rebar | 60d | 2025-08-13 A | 2025-11-04 | 52 | 32% | 41d | 388d |  |
| 98 | 2.2.2 | Procure Pipe, Fittings, Valves | 70d | 2025-08-13 A | 2025-11-18 | 52 | 27% | 51d | 378d |  |
| 99 | 2.2.3 | Procure Electrical, and Instruments | 130d | 2025-08-13 A | 2026-02-10 | 52 | 15% | 111d | 318d |  |
| 100 | 2.2.4 | Procure Bolted Steel Tank (158) | 140d | 2025-08-13 A | 2026-02-24 | 52 | 14% | 121d | 308d |  |
| 101 | 2.3 | **Construction** | 319d | 2026-02-10 | 2027-04-30 |  |  |  | 0d |  |
| 102 | 2.3.1 | **BK-W-047-02 (GROUP 1)** | 99d | 2026-02-10 | 2026-06-26 |  |  |  | 27d |  |
| 103 | 2.3.1.1 | Mobilization | 1d | 2026-02-10 | 2026-02-10 | 57 |  |  | 27d | 0d |
| 104 | 2.3.1.2 | Demo, Removal, Relocate and Abandonment | 1d | 2026-02-11 | 2026-02-11 | 103 |  |  | 27d | 0d |
| 105 | 2.3.1.3 | Foundations & Vessel Anchorage | 13d | 2026-02-12 | 2026-03-02 | 104 |  |  | 27d | 0d |
| 106 | 2.3.1.4 | Storm Drain/Sewer Piping | 19d | 2026-03-03 | 2026-03-27 | 105 |  |  | 277d | 48d |
| 107 | 2.3.1.5 | Foundation (Cure) | 7d | 2026-03-03 | 2026-03-11 | 105 |  |  | 259d | 39d |
| 108 | 2.3.1.6 | Vessel Offloading & Assembly | 5d | 2026-05-06 | 2026-05-12 | 107, 25 |  |  | 220d | 0d |
| 109 | 2.3.1.7 | Station Piping Installation | 16d | 2026-05-13 | 2026-06-03 | 108 |  |  | 220d | 0d |
| 110 | 2.3.1.8 | Pipe Pressure Testing | 1d | 2026-06-04 | 2026-06-04 | 109 |  |  | 235d | 0d |
| 111 | 2.3.1.9 | Vessel Pressure Testing | 1d | 2026-06-05 | 2026-06-05 | 110 |  |  | 235d |  |
| 112 | 2.3.1.10 | Electrical, Control, & Instrumentation | 15d | 2026-05-28 | 2026-06-17 | 109FS-5d |  |  | 220d | 0d |
| 113 | 2.3.1.11 | Site Improvements | 1d | 2026-06-04 | 2026-06-04 | 109, 105, 108, 106 |  |  | 229d | 0d |
| 114 | 2.3.1.12 | Painting & Coating | 5d | 2026-06-05 | 2026-06-11 | 113 |  |  | 229d | 9d |
| 115 | 2.3.1.13 | Startup & Commissioning | 5d | 2026-06-18 | 2026-06-24 | 109, 105, 108, 106, 112 |  |  | 220d | 0d |
| 116 | 2.3.1.14 | Media Loading | 1d | 2026-06-25 | 2026-06-25 | 115 |  |  | 221d |  |
| 117 | 2.3.1.15 | Owner Training | 1d | 2026-06-25 | 2026-06-25 | 115 |  |  | 221d |  |
| 118 | 2.3.1.16 | Punchlist | 2d | 2026-06-25 | 2026-06-26 | 112, 113, 114, 115 |  |  | 220d |  |
| 119 | 2.3.2 | **BK-W-145-01 (GROUP 1)** | 99d | 2026-03-03 | 2026-07-17 |  |  |  | 27d |  |
| 120 | 2.3.2.1 | Mobilization | 1d | 2026-03-03 | 2026-03-03 | 105 |  |  | 27d | 0d |
| 121 | 2.3.2.2 | Demo, Removal, Relocate and Abandonment | 4d | 2026-03-04 | 2026-03-09 | 120 |  |  | 27d | 0d |
| 122 | 2.3.2.3 | Foundations & Vessel Anchorage | 16d | 2026-03-10 | 2026-03-31 | 121 |  |  | 27d | 0d |
| 123 | 2.3.2.4 | Foundation (Cure) | 7d | 2026-04-01 | 2026-04-09 | 122 |  |  | 233d | 28d |
| 124 | 2.3.2.5 | Vessel Offloading & Assembly | 5d | 2026-05-20 | 2026-05-26 | 123, 26 |  |  | 205d | 0d |
| 125 | 2.3.2.6 | Station Piping Installation | 16d | 2026-05-27 | 2026-06-17 | 124 |  |  | 205d | 0d |
| 126 | 2.3.2.7 | Pipe Pressure Testing | 1d | 2026-06-18 | 2026-06-18 | 125 |  |  | 225d | 0d |
| 127 | 2.3.2.8 | Vessel Pressure Testing | 1d | 2026-06-19 | 2026-06-19 | 126 |  |  | 225d |  |
| 128 | 2.3.2.9 | Chemical Enclosure Relocation/Replacement | 2d | 2026-06-18 | 2026-06-19 | 125 |  |  | 213d | 8d |
| 129 | 2.3.2.10 | Electrical, Control, & Instrumentation | 15d | 2026-06-11 | 2026-07-01 | 125FS-5d |  |  | 205d | 0d |
| 130 | 2.3.2.11 | Startup & Commissioning | 5d | 2026-07-02 | 2026-07-08 | 125, 122, 124, 128, 129 |  |  | 210d | 0d |
| 131 | 2.3.2.12 | Media Loading | 1d | 2026-07-09 | 2026-07-09 | 130 |  |  | 211d |  |
| 132 | 2.3.2.13 | Owner Training | 1d | 2026-07-09 | 2026-07-09 | 130 |  |  | 211d |  |
| 133 | 2.3.2.14 | Site Improvements | 5d | 2026-07-02 | 2026-07-08 | 125, 122, 124, 128, 129 |  |  | 205d | 0d |
| 134 | 2.3.2.15 | Painting & Coating | 5d | 2026-07-09 | 2026-07-15 | 133 |  |  | 205d | 0d |
| 135 | 2.3.2.16 | Punchlist | 2d | 2026-07-16 | 2026-07-17 | 129, 130, 133, 134 |  |  | 205d |  |

| ID | WBS | Task | Duration | Start | Finish | Predecessors | Total slack | Free slack |
| --- | --- | --- | --- | --- | --- | --- | --- | --- |
| 136 | 2.3.3 | **BK-W-184-01 (GROUP 1)** | 121d | 2026-04-01 | 2026-09-16 |  | 27d |  |
| 137 | 2.3.3.1 | Mobilization | 1d | 2026-04-01 | 2026-04-01 | 122 | 27d | 0d |
| 138 | 2.3.3.2 | Demo, Removal, Relocate and Abandonment | 2d | 2026-04-02 | 2026-04-03 | 137 | 27d | 0d |
| 139 | 2.3.3.3 | Foundations & Vessel Anchorage | 16d | 2026-04-06 | 2026-04-27 | 138 | 27d | 0d |
| 140 | 2.3.3.4 | Foundation (Cure) | 7d | 2026-04-28 | 2026-05-06 | 139 | 211d | 49d |
| 141 | 2.3.3.5 | Vessel Offloading & Assembly | 5d | 2026-07-15 | 2026-07-21 | 140, 29 | 162d | 0d |
| 142 | 2.3.3.6 | Station Piping Installation | 13d | 2026-07-22 | 2026-08-07 | 141 | 162d | 0d |
| 143 | 2.3.3.7 | Pipe Pressure Testing | 1d | 2026-08-10 | 2026-08-10 | 142 | 188d | 0d |
| 144 | 2.3.3.8 | Vessel Pressure Testing | 1d | 2026-08-11 | 2026-08-11 | 143 | 188d |  |
| 145 | 2.3.3.9 | Electrical, Control, & Instrumentation | 15d | 2026-08-03 | 2026-08-21 | 142FS-5d | 173d | 10d |
| 146 | 2.3.3.10 | Storm Drain/Sewer Piping | 20d | 2026-08-10 | 2026-09-04 | 142 | 162d | 0d |
| 147 | 2.3.3.11 | Startup & Commissioning | 5d | 2026-09-07 | 2026-09-11 | 142, 139, 141, 146, 145 | 163d | 0d |
| 148 | 2.3.3.12 | Media Loading | 1d | 2026-09-14 | 2026-09-14 | 147 | 164d |  |
| 149 | 2.3.3.13 | Owner Training | 1d | 2026-09-14 | 2026-09-14 | 147 | 164d |  |
| 150 | 2.3.3.14 | Site Improvements | 1d | 2026-09-07 | 2026-09-07 | 142, 139, 141, 146 | 162d | 0d |
| 151 | 2.3.3.15 | Painting & Coating | 5d | 2026-09-08 | 2026-09-14 | 150 | 162d | 0d |
| 152 | 2.3.3.16 | Punchlist | 2d | 2026-09-15 | 2026-09-16 | 145, 146, 147, 150, 151 | 162d |  |
| 153 | 2.3.4 | **BKNG-W-188-01 (GROUP 1)** | 176d | 2026-04-28 | 2026-12-29 |  | 27d |  |
| 154 | 2.3.4.1 | Mobilization | 1d | 2026-04-28 | 2026-04-28 | 139 | 27d | 0d |
| 155 | 2.3.4.2 | Demo, Removal, Relocate and Abandonment | 3d | 2026-04-29 | 2026-05-01 | 154 | 27d | 0d |
| 156 | 2.3.4.3 | Foundations & Vessel Anchorage | 13d | 2026-05-04 | 2026-05-20 | 155 | 27d | 0d |
| 157 | 2.3.4.4 | Foundation (Cure) | 7d | 2026-05-21 | 2026-05-29 | 156 | 190d | 102d |
| 158 | 2.3.4.5 | Vessel Offloading & Assembly | 6d | 2026-10-21 | 2026-10-28 | 157, 36 | 88d | 0d |
| 159 | 2.3.4.6 | Station Piping Installation | 18d | 2026-10-29 | 2026-11-23 | 158 | 88d | 0d |
| 160 | 2.3.4.7 | Pipe Pressure Testing | 1d | 2026-11-24 | 2026-11-24 | 159 | 112d | 0d |
| 161 | 2.3.4.8 | Vessel Pressure Testing | 1d | 2026-11-25 | 2026-11-25 | 160 | 112d |  |
| 162 | 2.3.4.9 | Chemical Enclosure Relocation/Replacement | 2d | 2026-11-24 | 2026-11-25 | 159 | 96d | 8d |
| 163 | 2.3.4.10 | Electrical, Control, & Instrumentation | 15d | 2026-11-17 | 2026-12-07 | 159FS-5d | 88d | 0d |
| 164 | 2.3.4.11 | FWD Storage Tank Basin | 9d | 2026-11-24 | 2026-12-04 | 159 | 89d | 1d |
| 165 | 2.3.4.12 | Startup & Commissioning | 5d | 2026-12-08 | 2026-12-14 | 159, 156, 158, 162, 164, 163 | 97d | 0d |
| 166 | 2.3.4.13 | Media Loading | 1d | 2026-12-15 | 2026-12-15 | 165 | 98d |  |
| 167 | 2.3.4.14 | Owner Training | 1d | 2026-12-15 | 2026-12-15 | 165 | 98d |  |
| 168 | 2.3.4.15 | Site Improvements | 9d | 2026-12-08 | 2026-12-18 | 159, 156, 158, 162, 164, 163 | 88d | 0d |
| 169 | 2.3.4.16 | Painting & Coating | 5d | 2026-12-21 | 2026-12-25 | 168 | 88d | 0d |
| 170 | 2.3.4.17 | Punchlist | 2d | 2026-12-28 | 2026-12-29 | 163, 165, 168, 169 | 88d |  |

| ID | WBS | Task | Duration | Start | Finish | Predecessors | Total slack | Free slack |
| --- | --- | --- | --- | --- | --- | --- | --- | --- |
| 171 | 2.3.5 | **BK-W-002-10 (GROUP 2)** | 82d | 2026-05-21 | 2026-09-11 |  | 27d |  |
| 172 | 2.3.5.1 | Mobilization | 1d | 2026-05-21 | 2026-05-21 | 69, 156 | 27d | 0d |
| 173 | 2.3.5.2 | Demo, Removal, Relocate and Abandonment | 2d | 2026-05-22 | 2026-05-25 | 172 | 27d | 0d |
| 174 | 2.3.5.3 | Foundations & Vessel Anchorage | 14d | 2026-05-26 | 2026-06-12 | 173 | 27d | 0d |
| 175 | 2.3.5.4 | Foundation (Cure) | 7d | 2026-06-15 | 2026-06-23 | 174 | 170d | 5d |
| 176 | 2.3.5.5 | Vessel Offloading & Assembly | 5d | 2026-07-01 | 2026-07-07 | 175, 28 | 165d | 0d |
| 177 | 2.3.5.6 | Station Piping Installation | 14d | 2026-07-08 | 2026-07-27 | 176 | 165d | 0d |
| 178 | 2.3.5.7 | Pipe Pressure Testing | 1d | 2026-07-28 | 2026-07-28 | 177 | 197d | 0d |
| 179 | 2.3.5.8 | Vessel Pressure Testing | 1d | 2026-07-29 | 2026-07-29 | 178 | 197d |  |
| 180 | 2.3.5.9 | Electrical, Control, & Instrumentation | 15d | 2026-07-21 | 2026-08-10 | 177FS-5d | 182d | 8d |
| 181 | 2.3.5.10 | Storm Drain/Sewer Piping | 18d | 2026-07-28 | 2026-08-20 | 177 | 165d | 0d |
| 182 | 2.3.5.11 | Startup & Commissioning | 5d | 2026-08-21 | 2026-08-27 | 177, 174, 176, 181, 180 | 174d | 0d |
| 183 | 2.3.5.12 | Media Loading | 1d | 2026-08-28 | 2026-08-28 | 182 | 175d |  |
| 184 | 2.3.5.13 | Owner Training | 1d | 2026-08-28 | 2026-08-28 | 182 | 175d |  |
| 185 | 2.3.5.14 | Site Improvements | 4d | 2026-08-21 | 2026-08-26 | 177, 174, 176, 181 | 165d | 0d |
| 186 | 2.3.5.15 | Painting & Coating | 5d | 2026-08-27 | 2026-09-02 | 185 | 170d | 5d |
| 187 | 2.3.5.16 | Landscaping & Irrigation | 10d | 2026-08-27 | 2026-09-09 | 185 | 165d | 0d |
| 188 | 2.3.5.17 | Punchlist | 2d | 2026-09-10 | 2026-09-11 | 180, 181, 182, 185, 187, 186 | 165d |  |
| 189 | 2.3.6 | **BK-W-007-07 (GROUP 2)** | 168d | 2026-06-15 | 2027-02-03 |  | 27d |  |
| 190 | 2.3.6.1 | Mobilization | 1d | 2026-06-15 | 2026-06-15 | 174 | 27d | 0d |
| 191 | 2.3.6.2 | Demo, Removal, Relocate and Abandonment | 2d | 2026-06-16 | 2026-06-17 | 190 | 27d | 0d |
| 192 | 2.3.6.3 | Foundations & Vessel Anchorage | 28d | 2026-06-18 | 2026-07-27 | 191 | 27d | 0d |
| 193 | 2.3.6.4 | Foundation (Cure) | 7d | 2026-07-28 | 2026-08-05 | 192 | 126d | 64d |
| 194 | 2.3.6.5 | Vessel Offloading & Assembly | 10d | 2026-11-04 | 2026-11-17 | 193, 37 | 62d | 0d |
| 195 | 2.3.6.6 | Station Piping Installation | 22d | 2026-11-18 | 2026-12-17 | 194 | 62d | 0d |
| 196 | 2.3.6.7 | Pipe Pressure Testing | 1d | 2026-12-18 | 2026-12-18 | 195 | 94d | 0d |
| 197 | 2.3.6.8 | Vessel Pressure Testing | 1d | 2026-12-21 | 2026-12-21 | 196 | 94d |  |
| 198 | 2.3.6.9 | Chemical Enclosure Relocation/Replacement | 1d | 2026-12-18 | 2026-12-18 | 195 | 87d | 25d |
| 199 | 2.3.6.10 | Electrical, Control, & Instrumentation | 15d | 2026-12-11 | 2026-12-31 | 195FS-5d | 79d | 16d |
| 200 | 2.3.6.11 | Storm Drain/Sewer Piping | 26d | 2026-12-18 | 2027-01-22 | 195 | 62d | 0d |
| 201 | 2.3.6.12 | Startup & Commissioning | 5d | 2027-01-25 | 2027-01-29 | 195, 192, 194, 198, 200, 199 | 63d | 0d |
| 202 | 2.3.6.13 | Media Loading | 1d | 2027-02-01 | 2027-02-01 | 201 | 64d |  |
| 203 | 2.3.6.14 | Owner Training | 1d | 2027-02-01 | 2027-02-01 | 201 | 64d |  |
| 204 | 2.3.6.15 | Site Improvements | 1d | 2027-01-25 | 2027-01-25 | 195, 192, 194, 198, 200 | 62d | 0d |
| 205 | 2.3.6.16 | Painting & Coating | 5d | 2027-01-26 | 2027-02-01 | 204 | 62d | 0d |
| 206 | 2.3.6.17 | Punchlist | 2d | 2027-02-02 | 2027-02-03 | 199, 200, 201, 204, 205 | 62d |  |

| ID | WBS | Task | Duration | Start | Finish | Predecessors | Total slack | Free slack |
| --- | --- | --- | --- | --- | --- | --- | --- | --- |
| 207 | 2.3.7 | **BK-W-043-02 (GROUP 2)** | 140d | 2026-07-28 | 2027-02-08 |  | 27d |  |
| 208 | 2.3.7.1 | Mobilization | 1d | 2026-07-28 | 2026-07-28 | 192 | 27d | 0d |
| 209 | 2.3.7.2 | Demo, Removal, Relocate and Abandonment | 5d | 2026-07-29 | 2026-08-04 | 208 | 27d | 0d |
| 210 | 2.3.7.3 | Foundations & Vessel Anchorage | 15d | 2026-08-05 | 2026-08-25 | 209 | 27d | 0d |
| 211 | 2.3.7.4 | Foundation (Cure) | 7d | 2026-08-26 | 2026-09-03 | 210 | 122d | 63d |
| 212 | 2.3.7.5 | Vessel Offloading & Assembly | 6d | 2026-12-02 | 2026-12-09 | 211, 40 | 59d | 0d |
| 213 | 2.3.7.6 | Station Piping Installation | 16d | 2026-12-10 | 2026-12-31 | 212 | 59d | 0d |
| 214 | 2.3.7.7 | Pipe Pressure Testing | 1d | 2027-01-01 | 2027-01-01 | 213 | 84d | 0d |
| 215 | 2.3.7.8 | Vessel Pressure Testing | 1d | 2027-01-04 | 2027-01-04 | 214 | 84d |  |
| 216 | 2.3.7.9 | Chemical Enclosure Relocation/Replacement | 2d | 2027-01-01 | 2027-01-04 | 213 | 71d | 12d |
| 217 | 2.3.7.10 | Storm Drain/Sewer Piping | 14d | 2027-01-01 | 2027-01-20 | 213 | 59d | 0d |
| 218 | 2.3.7.11 | Electrical, Control, & Instrumentation | 15d | 2026-12-25 | 2027-01-14 | 213FS-5d | 69d | 4d |
| 219 | 2.3.7.12 | Startup & Commissioning | 5d | 2027-01-21 | 2027-01-27 | 213, 210, 212, 216, 217, 218 | 65d | 0d |
| 220 | 2.3.7.13 | Owner Training | 1d | 2027-01-28 | 2027-01-28 | 219 | 65d | 0d |
| 221 | 2.3.7.14 | Media Loading | 1d | 2027-01-29 | 2027-01-29 | 220 | 65d |  |
| 222 | 2.3.7.15 | Site Improvements | 1d | 2027-01-21 | 2027-01-21 | 213, 210, 212, 216, 217 | 59d | 0d |
| 223 | 2.3.7.16 | Landscaping & Irrigation | 10d | 2027-01-22 | 2027-02-04 | 222 | 59d | 0d |
| 224 | 2.3.7.17 | Painting & Coating | 5d | 2027-01-22 | 2027-01-28 | 222 | 64d | 5d |
| 225 | 2.3.7.18 | Punchlist | 2d | 2027-02-05 | 2027-02-08 | 218, 219, 222, 223, 224 | 59d |  |
| 226 | 2.3.8 | **BK-W-077-02 (GROUP 2)** | 82d | 2026-08-26 | 2026-12-17 |  | 27d |  |
| 227 | 2.3.8.1 | Mobilization | 1d | 2026-08-26 | 2026-08-26 | 210 | 27d | 0d |
| 228 | 2.3.8.2 | Demo, Removal, Relocate and Abandonment | 2d | 2026-08-27 | 2026-08-28 | 227 | 27d | 0d |
| 229 | 2.3.8.3 | Foundations & Vessel Anchorage | 15d | 2026-08-31 | 2026-09-18 | 228 | 27d | 0d |
| 230 | 2.3.8.4 | Foundation (Cure) | 7d | 2026-09-21 | 2026-09-29 | 229 | 96d | 0d |
| 231 | 2.3.8.5 | Vessel Offloading & Assembly | 5d | 2026-09-30 | 2026-10-06 | 230, 30 | 96d | 0d |
| 232 | 2.3.8.6 | Station Piping Installation | 17d | 2026-10-07 | 2026-10-29 | 231 | 96d | 0d |
| 233 | 2.3.8.7 | Pipe Pressure Testing | 1d | 2026-10-30 | 2026-10-30 | 232 | 129d | 0d |
| 234 | 2.3.8.8 | Vessel Pressure Testing | 1d | 2026-11-02 | 2026-11-02 | 233 | 129d |  |
| 235 | 2.3.8.9 | FWD Storage Tank Basin | 6d | 2026-10-30 | 2026-11-06 | 232 | 105d | 9d |
| 236 | 2.3.8.10 | Electrical, Control, & Instrumentation | 15d | 2026-10-30 | 2026-11-19 | 232 | 96d | 0d |
| 237 | 2.3.8.11 | Site Improvements | 3d | 2026-11-20 | 2026-11-24 | 232, 229, 231, 235, 236 | 96d | 0d |
| 238 | 2.3.8.12 | Startup & Commissioning | 5d | 2026-11-20 | 2026-11-26 | 232, 229, 231, 235, 236 | 109d | 0d |
| 239 | 2.3.8.13 | Media Loading | 1d | 2026-11-27 | 2026-11-27 | 238 | 110d |  |
| 240 | 2.3.8.14 | Owner Training | 1d | 2026-11-27 | 2026-11-27 | 238 | 110d |  |
| 241 | 2.3.8.15 | Landscaping & Irrigation | 10d | 2026-11-25 | 2026-12-08 | 237 | 96d | 0d |
| 242 | 2.3.8.16 | Painting & Coating | 5d | 2026-12-09 | 2026-12-15 | 241 | 96d | 0d |
| 243 | 2.3.8.17 | Punchlist | 2d | 2026-12-16 | 2026-12-17 | 236, 237, 238, 241, 242 | 96d |  |

| ID | WBS | Task | Duration | Start | Finish | Predecessors | Total slack | Free slack |
| --- | --- | --- | --- | --- | --- | --- | --- | --- |
| 244 | 2.3.9 | **BK-W-089-01 (GROUP 2)** | 90d | 2026-09-21 | 2027-01-22 |  | 27d |  |
| 245 | 2.3.9.1 | Mobilization | 1d | 2026-09-21 | 2026-09-21 | 229 | 27d | 0d |
| 246 | 2.3.9.2 | Demo, Removal, Relocate and Abandonment | 1d | 2026-09-22 | 2026-09-22 | 245 | 27d | 0d |
| 247 | 2.3.9.3 | Foundations & Vessel Anchorage | 15d | 2026-09-23 | 2026-10-13 | 246 | 27d | 0d |
| 248 | 2.3.9.4 | Foundation (Cure) | 7d | 2026-10-14 | 2026-10-22 | 247 | 70d | 0d |
| 249 | 2.3.9.5 | Vessel Offloading & Assembly | 5d | 2026-10-23 | 2026-10-29 | 248, 32 | 70d | 0d |
| 250 | 2.3.9.6 | Station Piping Installation | 20d | 2026-10-30 | 2026-11-26 | 249 | 70d | 0d |
| 251 | 2.3.9.7 | Pipe Pressure Testing | 1d | 2026-11-27 | 2026-11-27 | 250 | 109d | 0d |
| 252 | 2.3.9.8 | Vessel Pressure Testing | 1d | 2026-11-30 | 2026-11-30 | 251 | 109d |  |
| 253 | 2.3.9.9 | Electrical, Control, & Instrumentation | 15d | 2026-11-20 | 2026-12-10 | 250FS-5d | 95d | 11d |
| 254 | 2.3.9.10 | Storm Drain/Sewer Piping | 21d | 2026-11-27 | 2026-12-25 | 250 | 70d | 0d |
| 255 | 2.3.9.11 | Startup & Commissioning | 5d | 2026-12-28 | 2027-01-01 | 250, 247, 249, 254, 253 | 84d | 0d |
| 256 | 2.3.9.12 | Media Loading | 1d | 2027-01-04 | 2027-01-04 | 255 | 84d |  |
| 257 | 2.3.9.13 | Owner Training | 1d | 2027-01-04 | 2027-01-04 | 255 | 84d |  |
| 258 | 2.3.9.14 | Site Improvements | 3d | 2026-12-28 | 2026-12-30 | 250, 247, 249, 254 | 70d | 0d |
| 259 | 2.3.9.15 | Landscaping & Irrigation | 10d | 2026-12-31 | 2027-01-13 | 258 | 70d | 0d |
| 260 | 2.3.9.16 | Painting & Coating | 5d | 2027-01-14 | 2027-01-20 | 259 | 70d | 0d |
| 261 | 2.3.9.17 | Punchlist | 2d | 2027-01-21 | 2027-01-22 | 260 | 70d |  |
| 262 | 2.3.10 | **BK-W-105-01 (GROUP 2)** | 104d | 2026-10-14 | 2027-03-08 |  | 27d |  |
| 263 | 2.3.10.1 | Mobilization | 1d | 2026-10-14 | 2026-10-14 | 247 | 27d | 0d |
| 264 | 2.3.10.2 | Demo, Removal, Relocate and Abandonment | 2d | 2026-10-15 | 2026-10-16 | 263 | 27d | 0d |
| 265 | 2.3.10.3 | Foundations & Vessel Anchorage | 15d | 2026-10-19 | 2026-11-06 | 264 | 27d | 0d |
| 266 | 2.3.10.4 | Foundation (Cure) | 7d | 2026-11-09 | 2026-11-17 | 265 | 59d | 20d |
| 267 | 2.3.10.5 | Vessel Offloading & Assembly | 5d | 2026-12-16 | 2026-12-22 | 266, 41 | 39d | 0d |
| 268 | 2.3.10.6 | Station Piping Installation | 19d | 2026-12-23 | 2027-01-18 | 267 | 39d | 0d |
| 269 | 2.3.10.7 | Pipe Pressure Testing | 1d | 2027-01-19 | 2027-01-19 | 268 | 72d | 0d |
| 270 | 2.3.10.8 | Vessel Pressure Testing | 1d | 2027-01-20 | 2027-01-20 | 269 | 72d |  |
| 271 | 2.3.10.9 | Electrical, Control, & Instrumentation | 15d | 2027-01-12 | 2027-02-01 | 268FS-5d | 57d | 15d |
| 272 | 2.3.10.10 | Storm Drain/Sewer Piping | 25d | 2027-01-19 | 2027-02-22 | 268 | 39d | 0d |
| 273 | 2.3.10.11 | Startup & Commissioning | 5d | 2027-02-23 | 2027-03-01 | 268, 265, 267, 272, 271 | 42d | 0d |
| 274 | 2.3.10.12 | Media Loading | 1d | 2027-03-02 | 2027-03-02 | 273 | 43d |  |
| 275 | 2.3.10.13 | Owner Training | 1d | 2027-03-02 | 2027-03-02 | 273 | 43d |  |
| 276 | 2.3.10.14 | Site Improvements | 3d | 2027-02-23 | 2027-02-25 | 268, 265, 267, 272 | 39d | 0d |
| 277 | 2.3.10.15 | Painting & Coating | 5d | 2027-02-26 | 2027-03-04 | 276 | 39d | 0d |
| 278 | 2.3.10.16 | Punchlist | 2d | 2027-03-05 | 2027-03-08 | 271, 272, 273, 276, 277 | 39d |  |

| ID | WBS | Task | Duration | Start | Finish | Predecessors | Total slack | Free slack |
| --- | --- | --- | --- | --- | --- | --- | --- | --- |
| 279 | 2.3.11 | **BK-W-134-01 (GROUP 2)** | 88d | 2026-11-09 | 2027-03-10 |  | 27d |  |
| 280 | 2.3.11.1 | Mobilization | 1d | 2026-11-09 | 2026-11-09 | 265 | 27d | 0d |
| 281 | 2.3.11.2 | Demo, Removal, Relocate and Abandonment | 7d | 2026-11-10 | 2026-11-18 | 280 | 27d | 0d |
| 282 | 2.3.11.3 | Foundations & Vessel Anchorage | 16d | 2026-11-19 | 2026-12-10 | 281 | 27d | 0d |
| 283 | 2.3.11.4 | Foundation (Cure) | 7d | 2026-12-11 | 2026-12-21 | 282 | 43d | 6d |
| 284 | 2.3.11.5 | Vessel Offloading & Assembly | 5d | 2026-12-30 | 2027-01-05 | 283, 42 | 37d | 0d |
| 285 | 2.3.11.6 | Station Piping Installation | 16d | 2027-01-06 | 2027-01-27 | 284 | 37d | 0d |
| 286 | 2.3.11.7 | Pipe Pressure Testing | 1d | 2027-01-28 | 2027-01-28 | 285 | 65d | 0d |
| 287 | 2.3.11.8 | Vessel Pressure Testing | 1d | 2027-01-29 | 2027-01-29 | 286 | 65d |  |
| 288 | 2.3.11.9 | Storm Drain/Sewer Piping | 10d | 2027-01-28 | 2027-02-10 | 285 | 37d | 0d |
| 289 | 2.3.11.10 | Electrical, Control, & Instrumentation | 15d | 2027-01-21 | 2027-02-10 | 285FS-5d | 37d | 0d |
| 290 | 2.3.11.11 | Startup & Commissioning | 5d | 2027-02-11 | 2027-02-17 | 285, 282, 284, 288, 289 | 50d | 0d |
| 291 | 2.3.11.12 | Media Loading | 1d | 2027-02-18 | 2027-02-18 | 290 | 51d |  |
| 292 | 2.3.11.13 | Owner Training | 1d | 2027-02-18 | 2027-02-18 | 290 | 51d |  |
| 293 | 2.3.11.14 | Site Improvements | 8d | 2027-02-11 | 2027-02-22 | 285, 282, 284, 288, 289 | 37d | 0d |
| 294 | 2.3.11.15 | Landscaping & Irrigation | 10d | 2027-02-23 | 2027-03-08 | 293 | 37d | 0d |
| 295 | 2.3.11.16 | Painting & Coating | 5d | 2027-02-23 | 2027-03-01 | 293 | 42d | 5d |
| 296 | 2.3.11.17 | Punchlist | 2d | 2027-03-09 | 2027-03-10 | 289, 290, 293, 294, 295 | 37d |  |
| 297 | 2.3.12 | **BK-W-149-01 (GROUP 2)** | 74d | 2026-12-11 | 2027-03-24 |  | 27d |  |
| 298 | 2.3.12.1 | Mobilization | 1d | 2026-12-11 | 2026-12-11 | 282 | 27d | 0d |
| 299 | 2.3.12.2 | Demo, Removal, Relocate and Abandonment | 5d | 2026-12-14 | 2026-12-18 | 298 | 27d | 0d |
| 300 | 2.3.12.3 | Foundations & Vessel Anchorage | 17d | 2026-12-21 | 2027-01-12 | 299 | 27d | 0d |
| 301 | 2.3.12.4 | Foundation (Cure) | 7d | 2027-01-13 | 2027-01-21 | 300 | 27d | 0d |
| 302 | 2.3.12.5 | Vessel Offloading & Assembly | 6d | 2027-01-22 | 2027-01-29 | 301, 43 | 27d | 0d |
| 303 | 2.3.12.6 | Station Piping Installation | 14d | 2027-02-01 | 2027-02-18 | 302 | 27d | 0d |
| 304 | 2.3.12.7 | Pipe Pressure Testing | 1d | 2027-02-19 | 2027-02-19 | 303 | 50d |  |
| 305 | 2.3.12.8 | Vessel Pressure Testing | 1d | 2027-02-19 | 2027-02-19 | 303 | 50d |  |
| 306 | 2.3.12.9 | Electrical, Control, & Instrumentation | 15d | 2027-02-01 | 2027-02-19 | 302 | 43d | 5d |
| 307 | 2.3.12.10 | FWD Storage Tank Basin | 6d | 2027-02-19 | 2027-02-26 | 303 | 27d | 0d |
| 308 | 2.3.12.11 | Startup & Commissioning | 5d | 2027-03-01 | 2027-03-05 | 303, 300, 302, 307, 306 | 38d | 0d |
| 309 | 2.3.12.12 | Media Loading | 1d | 2027-03-08 | 2027-03-08 | 308 | 39d |  |
| 310 | 2.3.12.13 | Owner Training | 1d | 2027-03-08 | 2027-03-08 | 308 | 39d |  |
| 311 | 2.3.12.14 | Site Improvements | 6d | 2027-03-01 | 2027-03-08 | 303, 300, 302, 307 | 27d | 0d |
| 312 | 2.3.12.15 | Landscaping & Irrigation | 10d | 2027-03-09 | 2027-03-22 | 311 | 27d | 0d |
| 313 | 2.3.12.16 | Painting & Coating | 5d | 2027-03-09 | 2027-03-15 | 311 | 32d | 5d |
| 314 | 2.3.12.17 | Punchlist | 2d | 2027-03-23 | 2027-03-24 | 306, 307, 308, 311, 312, 313 | 27d |  |

| ID | WBS | Task | Duration | Start | Finish | Predecessors | Total slack | Free slack |
| --- | --- | --- | --- | --- | --- | --- | --- | --- |
| 315 | 2.3.13 | **BK-W-150-01 (GROUP 2)** | 101d | 2026-11-09 | 2027-03-29 |  | 24d |  |
| 316 | 2.3.13.1 | Mobilization | 1d | 2026-11-09 | 2026-11-09 | 265 | 55d | 0d |
| 317 | 2.3.13.2 | Demo, Removal, Relocate and Abandonment | 1d | 2026-11-10 | 2026-11-10 | 316 | 55d | 0d |
| 318 | 2.3.13.3 | Foundations & Vessel Anchorage | 17d | 2026-11-11 | 2026-12-03 | 317 | 55d | 0d |
| 319 | 2.3.13.4 | Foundation (Cure) | 7d | 2026-12-04 | 2026-12-14 | 318 | 55d | 31d |
| 320 | 2.3.13.5 | Vessel Offloading & Assembly | 5d | 2027-01-27 | 2027-02-02 | 319, 44 | 24d | 0d |
| 321 | 2.3.13.6 | Station Piping Installation | 15d | 2027-02-03 | 2027-02-23 | 320 | 24d | 0d |
| 322 | 2.3.13.7 | Pipe Pressure Testing | 1d | 2027-02-24 | 2027-02-24 | 321 | 46d | 0d |
| 323 | 2.3.13.8 | Vessel Pressure Testing | 1d | 2027-02-25 | 2027-02-25 | 322 | 46d |  |
| 324 | 2.3.13.9 | Electrical, Control, & Instrumentation | 15d | 2027-02-24 | 2027-03-16 | 321 | 24d | 0d |
| 325 | 2.3.13.10 | Startup & Commissioning | 5d | 2027-03-17 | 2027-03-23 | 321, 318, 320, 324 | 26d | 0d |
| 326 | 2.3.13.11 | Media Loading | 1d | 2027-03-24 | 2027-03-24 | 325 | 27d |  |
| 327 | 2.3.13.12 | Owner Training | 1d | 2027-03-24 | 2027-03-24 | 325 | 27d |  |
| 328 | 2.3.13.13 | Site Improvements | 2d | 2027-03-17 | 2027-03-18 | 321, 318, 320, 324 | 24d | 0d |
| 329 | 2.3.13.14 | Painting & Coating | 5d | 2027-03-19 | 2027-03-25 | 328 | 24d | 0d |
| 330 | 2.3.13.15 | Punchlist | 2d | 2027-03-26 | 2027-03-29 | 324, 325, 328, 329 | 24d |  |
| 331 | 2.3.14 | **BK-W-157-01 (GROUP 2)** | 93d | 2026-10-14 | 2027-02-19 |  | 50d |  |
| 332 | 2.3.14.1 | Mobilization | 1d | 2026-10-14 | 2026-10-14 | 247 | 50d | 0d |
| 333 | 2.3.14.2 | Demo, Removal, Relocate and Abandonment | 2d | 2026-10-15 | 2026-10-16 | 332 | 50d | 0d |
| 334 | 2.3.14.3 | Foundations & Vessel Anchorage | 24d | 2026-10-19 | 2026-11-19 | 333 | 50d | 0d |
| 335 | 2.3.14.4 | Foundation (Cure) | 7d | 2026-11-20 | 2026-11-30 | 334 | 50d | 0d |
| 336 | 2.3.14.5 | Vessel Offloading & Assembly | 11d | 2026-12-01 | 2026-12-15 | 335, 35 | 50d | 0d |
| 337 | 2.3.14.6 | Station Piping Installation | 23d | 2026-12-16 | 2027-01-15 | 336 | 50d | 0d |
| 338 | 2.3.14.7 | Pipe Pressure Testing | 1d | 2027-01-18 | 2027-01-18 | 337 | 73d | 0d |
| 339 | 2.3.14.8 | Vessel Pressure Testing | 1d | 2027-01-19 | 2027-01-19 | 338 | 73d |  |
| 340 | 2.3.14.9 | Storm Drain/Sewer Piping | 17d | 2027-01-18 | 2027-02-09 | 337 | 50d | 0d |
| 341 | 2.3.14.10 | Electrical, Control, & Instrumentation | 15d | 2027-01-11 | 2027-01-29 | 337FS-5d | 58d | 7d |
| 342 | 2.3.14.11 | Startup & Commissioning | 5d | 2027-02-10 | 2027-02-16 | 337, 334, 336, 340, 341 | 51d | 0d |
| 343 | 2.3.14.12 | Media Loading | 1d | 2027-02-17 | 2027-02-17 | 342 | 52d |  |
| 344 | 2.3.14.13 | Owner Training | 1d | 2027-02-17 | 2027-02-17 | 342 | 52d |  |
| 345 | 2.3.14.14 | Site Improvements | 1d | 2027-02-10 | 2027-02-10 | 337, 334, 336, 340 | 50d | 0d |
| 346 | 2.3.14.15 | Painting & Coating | 5d | 2027-02-11 | 2027-02-17 | 345 | 50d | 0d |
| 347 | 2.3.14.16 | Punchlist | 2d | 2027-02-18 | 2027-02-19 | 341, 342, 345, 346 | 50d |  |

| ID | WBS | Task | Duration | Start | Finish | Predecessors | Total slack | Free slack |
| --- | --- | --- | --- | --- | --- | --- | --- | --- |
| 348 | 2.3.15 | **BK-W-158-01 (GROUP 2)** | 102d | 2026-10-14 | 2027-03-04 |  | 41d |  |
| 349 | 2.3.15.1 | Mobilization | 1d | 2026-10-14 | 2026-10-14 | 247 | 41d | 0d |
| 350 | 2.3.15.2 | Demo, Removal, Relocate and Abandonment | 2d | 2026-10-15 | 2026-10-16 | 349 | 41d | 0d |
| 351 | 2.3.15.3 | FWD Storage Tank Basin | 70d | 2026-10-19 | 2027-01-22 | 350 | 56d | 15d |
| 352 | 2.3.15.4 | Foundations & Vessel Anchorage | 29d | 2026-10-19 | 2026-11-26 | 350 | 41d | 0d |
| 353 | 2.3.15.5 | Foundation (Cure) | 7d | 2026-11-27 | 2026-12-07 | 352 | 41d | 0d |
| 354 | 2.3.15.6 | Vessel Offloading & Assembly | 11d | 2026-12-08 | 2026-12-22 | 353, 36 | 41d | 0d |
| 355 | 2.3.15.7 | Station Piping Installation | 22d | 2026-12-23 | 2027-01-21 | 354 | 41d | 0d |
| 356 | 2.3.15.8 | Pipe Pressure Testing | 1d | 2027-01-22 | 2027-01-22 | 355 | 69d | 0d |
| 357 | 2.3.15.9 | Vessel Pressure Testing | 1d | 2027-01-25 | 2027-01-25 | 356 | 69d |  |
| 358 | 2.3.15.10 | Chemical Enclosure Relocation/Replacement | 2d | 2027-01-22 | 2027-01-25 | 355 | 55d | 14d |
| 359 | 2.3.15.11 | Electrical, Control, & Instrumentation | 15d | 2027-01-15 | 2027-02-04 | 355FS-5d | 54d | 6d |
| 360 | 2.3.15.12 | Storm Drain/Sewer Piping | 16d | 2027-01-22 | 2027-02-12 | 355 | 41d | 0d |
| 361 | 2.3.15.13 | Startup & Commissioning | 5d | 2027-02-15 | 2027-02-19 | 355, 352, 354, 358, 360, 351, 359 | 48d | 0d |
| 362 | 2.3.15.14 | Media Loading | 1d | 2027-02-22 | 2027-02-22 | 361 | 49d |  |
| 363 | 2.3.15.15 | Owner Training | 1d | 2027-02-22 | 2027-02-22 | 361 | 49d |  |
| 364 | 2.3.15.16 | Site Improvements | 2d | 2027-02-15 | 2027-02-16 | 355, 352, 354, 358, 360, 351 | 41d | 0d |
| 365 | 2.3.15.17 | Landscaping & Irrigation | 10d | 2027-02-17 | 2027-03-02 | 364 | 41d | 0d |
| 366 | 2.3.15.18 | Painting & Coating | 5d | 2027-02-17 | 2027-02-23 | 364 | 46d | 5d |
| 367 | 2.3.15.19 | Punchlist | 2d | 2027-03-03 | 2027-03-04 | 359, 360, 361, 364, 365, 366 | 41d |  |
| 368 | 2.3.16 | **BK-W-010-02 (GROUP 3)** | 161d | 2026-04-21 | 2026-12-01 |  | 84d |  |
| 369 | 2.3.16.1 | Mobilization | 1d | 2026-04-21 | 2026-04-21 | 15, 81 | 84d | 0d |
| 370 | 2.3.16.2 | Demo, Removal, Relocate and Abandonment | 2d | 2026-04-22 | 2026-04-23 | 369 | 84d | 0d |
| 371 | 2.3.16.3 | Foundations & Vessel Anchorage | 17d | 2026-04-24 | 2026-05-18 | 370 | 84d | 0d |
| 372 | 2.3.16.4 | Foundation (Cure) | 7d | 2026-05-19 | 2026-05-27 | 371 | 182d | 74d |
| 373 | 2.3.16.5 | Vessel Offloading & Assembly | 5d | 2026-09-09 | 2026-09-15 | 372, 33 | 108d | 0d |
| 374 | 2.3.16.6 | Station Piping Installation | 18d | 2026-09-16 | 2026-10-09 | 373 | 108d | 0d |
| 375 | 2.3.16.7 | Pipe Pressure Testing | 1d | 2026-10-12 | 2026-10-12 | 374 | 143d | 0d |
| 376 | 2.3.16.8 | Vessel Pressure Testing | 1d | 2026-10-13 | 2026-10-13 | 375 | 143d |  |
| 377 | 2.3.16.9 | Chemical Enclosure Relocation/Replacement | 2d | 2026-10-12 | 2026-10-13 | 374 | 128d | 20d |
| 378 | 2.3.16.10 | Electrical, Control, & Instrumentation | 15d | 2026-10-05 | 2026-10-23 | 374FS-5d | 128d | 12d |
| 379 | 2.3.16.11 | Storm Drain/Sewer Piping | 22d | 2026-10-12 | 2026-11-10 | 374 | 108d | 0d |
| 380 | 2.3.16.12 | Startup & Commissioning | 5d | 2026-11-11 | 2026-11-17 | 374, 371, 373, 377, 379, 378 | 116d | 0d |
| 381 | 2.3.16.13 | Media Loading | 1d | 2026-11-18 | 2026-11-18 | 380 | 117d |  |
| 382 | 2.3.16.14 | Site Improvements | 3d | 2026-11-11 | 2026-11-13 | 374, 371, 373, 377, 379 | 108d | 0d |
| 383 | 2.3.16.15 | Owner Training | 1d | 2026-11-18 | 2026-11-18 | 380 | 117d |  |
| 384 | 2.3.16.16 | Landscaping & Irrigation | 10d | 2026-11-16 | 2026-11-27 | 382 | 108d | 0d |
| 385 | 2.3.16.17 | Painting & Coating | 5d | 2026-11-16 | 2026-11-20 | 382 | 113d | 5d |
| 386 | 2.3.16.18 | Punchlist | 2d | 2026-11-30 | 2026-12-01 | 378, 379, 380, 382, 384, 385 | 108d |  |

| ID | WBS | Task | Duration | Start | Finish | Predecessors | Total slack | Free slack |
| --- | --- | --- | --- | --- | --- | --- | --- | --- |
| 387 | 2.3.17 | **BK-W-040-02 (GROUP 3)** | 188d | 2026-05-19 | 2027-02-04 |  | 61d |  |
| 388 | 2.3.17.1 | Mobilization | 1d | 2026-05-19 | 2026-05-19 | 16, 81, 371 | 84d | 0d |
| 389 | 2.3.17.2 | Demo, Removal, Relocate and Abandonment | 4d | 2026-05-20 | 2026-05-25 | 388 | 84d | 0d |
| 390 | 2.3.17.3 | Foundations & Vessel Anchorage | 16d | 2026-05-26 | 2026-06-16 | 389 | 84d | 0d |
| 391 | 2.3.17.4 | Foundation (Cure) | 7d | 2026-06-17 | 2026-06-25 | 390 | 164d | 103d |
| 392 | 2.3.17.5 | Vessel Offloading & Assembly | 5d | 2026-11-18 | 2026-11-24 | 391, 39 | 61d | 0d |
| 393 | 2.3.17.6 | Station Piping Installation | 14d | 2026-11-25 | 2026-12-14 | 392 | 61d | 0d |
| 394 | 2.3.17.7 | Storm Drain/Sewer Piping | 25d | 2026-12-15 | 2027-01-18 | 393 | 61d | 0d |
| 395 | 2.3.17.8 | Pipe Pressure Testing | 1d | 2026-12-15 | 2026-12-15 | 393 | 97d | 0d |
| 396 | 2.3.17.9 | Vessel Pressure Testing | 1d | 2026-12-16 | 2026-12-16 | 395 | 97d |  |
| 397 | 2.3.17.10 | Electrical, Control, & Instrumentation | 15d | 2026-12-08 | 2026-12-28 | 393FS-5d | 82d | 15d |
| 398 | 2.3.17.11 | Startup & Commissioning | 5d | 2027-01-19 | 2027-01-25 | 393, 390, 392, 394, 397 | 67d | 0d |
| 399 | 2.3.17.12 | Media Loading | 1d | 2027-01-26 | 2027-01-26 | 398 | 68d |  |
| 400 | 2.3.17.13 | Owner Training | 1d | 2027-01-26 | 2027-01-26 | 398 | 68d |  |
| 401 | 2.3.17.14 | Site Improvements | 1d | 2027-01-19 | 2027-01-19 | 393, 390, 392, 394 | 61d | 0d |
| 402 | 2.3.17.15 | Landscaping & Irrigation | 10d | 2027-01-20 | 2027-02-02 | 401 | 61d | 0d |
| 403 | 2.3.17.16 | Painting & Coating | 5d | 2027-01-20 | 2027-01-26 | 401 | 66d | 5d |
| 404 | 2.3.17.17 | Punchlist | 2d | 2027-02-03 | 2027-02-04 | 397, 398, 401, 402, 403 | 61d |  |
| 405 | 2.3.18 | **BK-W-062-02 (GROUP 3)** | 228d | 2026-06-17 | 2027-04-30 |  | 0d |  |
| 406 | 2.3.18.1 | Mobilization | 1d | 2026-06-17 | 2026-06-17 | 17, 81, 390 | 84d | 0d |
| 407 | 2.3.18.2 | Demo, Removal, Relocate and Abandonment | 5d | 2026-06-18 | 2026-06-24 | 406 | 84d | 0d |
| 408 | 2.3.18.3 | Foundations & Vessel Anchorage | 17d | 2026-06-25 | 2026-07-17 | 407 | 84d | 0d |
| 409 | 2.3.18.4 | Foundation (Cure) | 7d | 2026-07-20 | 2026-07-28 | 408 | 150d |  |
| 410 | 2.3.18.5 | Vessel Offloading & Assembly | 5d | 2027-02-24 | 2027-03-02 | 409, 45 | 0d |  |
| 411 | 2.3.18.6 | Station Piping Installation | 14d | 2027-03-03 | 2027-03-22 | 410 | 0d |  |
| 412 | 2.3.18.7 | Pipe Pressure Testing | 1d | 2027-03-23 | 2027-03-23 | 411 | 27d | 0d |
| 413 | 2.3.18.8 | Vessel Pressure Testing | 1d | 2027-03-24 | 2027-03-24 | 412 | 27d |  |
| 414 | 2.3.18.9 | Electrical, Control, & Instrumentation | 15d | 2027-03-16 | 2027-04-05 | 411FS-5d | 12d | 11d |
| 415 | 2.3.18.10 | Storm Drain/Sewer Piping | 21d | 2027-03-23 | 2027-04-20 | 411 | 0d |  |
| 416 | 2.3.18.11 | Startup & Commissioning | 5d | 2027-04-21 | 2027-04-27 | 411, 408, 410, 415, 414 | 1d | 0d |
| 417 | 2.3.18.12 | Media Loading | 1d | 2027-04-28 | 2027-04-28 | 416 | 2d |  |
| 418 | 2.3.18.13 | Owner Training | 1d | 2027-04-28 | 2027-04-28 | 416 | 2d |  |
| 419 | 2.3.18.14 | Site Improvements | 1d | 2027-04-21 | 2027-04-21 | 411, 408, 410, 415 | 0d |  |
| 420 | 2.3.18.15 | Painting & Coating | 5d | 2027-04-22 | 2027-04-28 | 419 | 0d |  |
| 421 | 2.3.18.16 | Punchlist | 2d | 2027-04-29 | 2027-04-30 | 414, 415, 416, 419, 420 | 0d |  |

| ID | WBS | Task | Duration | Start | Finish | Predecessors | Total slack | Free slack | Constraint |
| --- | --- | --- | --- | --- | --- | --- | --- | --- | --- |
| 422 | 2.3.19 | **BK-W-042-02 (GROUP 4) RESUME WORK PER CAL WATER - 5-6-25** | 98d | 2026-07-20 | 2026-12-02 |  | 84d |  |  |
| 423 | 2.3.19.1 | Mobilization | 1d | 2026-07-20 | 2026-07-20 | 408 | 84d | 0d | start no earlier than 2026-07-06 |
| 424 | 2.3.19.2 | Demo, Removal, Relocate and Abandonment | 5d | 2026-07-21 | 2026-07-27 | 423 | 84d | 0d |  |
| 425 | 2.3.19.3 | Foundations & Vessel Anchorage | 17d | 2026-07-28 | 2026-08-19 | 424 | 84d | 0d |  |
| 426 | 2.3.19.4 | Foundation (Cure) | 7d | 2026-08-20 | 2026-08-28 | 425 | 107d | 0d |  |
| 427 | 2.3.19.5 | Vessel Offloading & Assembly | 5d | 2026-08-31 | 2026-09-04 | 426, 31 | 107d | 0d |  |
| 428 | 2.3.19.6 | Station Piping Installation | 14d | 2026-09-07 | 2026-09-24 | 427 | 107d | 0d |  |
| 429 | 2.3.19.7 | Pipe Pressure Testing | 1d | 2026-09-25 | 2026-09-25 | 428 | 154d | 0d |  |
| 430 | 2.3.19.8 | Vessel Pressure Testing | 1d | 2026-09-28 | 2026-09-28 | 429 | 154d |  |  |
| 431 | 2.3.19.9 | Electrical, Control, & Instrumentation | 15d | 2026-09-25 | 2026-10-15 | 428 | 107d | 0d |  |
| 432 | 2.3.19.10 | Storm Drain/Sewer Piping | 21d | 2026-10-16 | 2026-11-13 | 431 | 107d | 0d |  |
| 433 | 2.3.19.11 | Startup & Commissioning | 5d | 2026-11-16 | 2026-11-20 | 432 | 107d | 0d |  |
| 434 | 2.3.19.12 | Media Loading | 1d | 2026-11-23 | 2026-11-23 | 433 | 114d |  |  |
| 435 | 2.3.19.13 | Owner Training | 1d | 2026-11-23 | 2026-11-23 | 433 | 114d |  |  |
| 436 | 2.3.19.14 | Site Improvements | 1d | 2026-11-23 | 2026-11-23 | 433 | 107d | 0d |  |
| 437 | 2.3.19.15 | Painting & Coating | 5d | 2026-11-24 | 2026-11-30 | 436 | 107d | 0d |  |
| 438 | 2.3.19.16 | Punchlist | 2d | 2026-12-01 | 2026-12-02 | 437 | 107d |  |  |
| 439 | 2.3.20 | **BK-W-130-01 (GROUP 4) RESUME WORK PER CAL WATER - 5-6-25** | 98d | 2026-08-20 | 2027-01-04 |  | 84d |  |  |
| 440 | 2.3.20.1 | Mobilization | 1d | 2026-08-20 | 2026-08-20 | 425 | 84d | 0d | start no earlier than 2026-08-18 |
| 441 | 2.3.20.2 | Demo, Removal, Relocate and Abandonment | 5d | 2026-08-21 | 2026-08-27 | 440 | 84d | 0d |  |
| 442 | 2.3.20.3 | Foundations & Vessel Anchorage | 17d | 2026-08-28 | 2026-09-21 | 441 | 84d | 0d |  |
| 443 | 2.3.20.4 | Foundation (Cure) | 7d | 2026-09-22 | 2026-09-30 | 442 | 84d | 0d |  |
| 444 | 2.3.20.5 | Vessel Offloading & Assembly | 5d | 2026-10-01 | 2026-10-07 | 443, 34 | 84d | 0d |  |
| 445 | 2.3.20.6 | Station Piping Installation | 14d | 2026-10-08 | 2026-10-27 | 444 | 84d | 0d |  |
| 446 | 2.3.20.7 | Pipe Pressure Testing | 1d | 2026-10-28 | 2026-10-28 | 445 | 131d | 0d |  |
| 447 | 2.3.20.8 | Vessel Pressure Testing | 1d | 2026-10-29 | 2026-10-29 | 446 | 131d |  |  |
| 448 | 2.3.20.9 | Electrical, Control, & Instrumentation | 15d | 2026-10-28 | 2026-11-17 | 445 | 84d | 0d |  |
| 449 | 2.3.20.10 | Storm Drain/Sewer Piping | 21d | 2026-11-18 | 2026-12-16 | 448 | 84d | 0d |  |
| 450 | 2.3.20.11 | Startup & Commissioning | 5d | 2026-12-17 | 2026-12-23 | 449 | 84d | 0d |  |
| 451 | 2.3.20.12 | Media Loading | 1d | 2026-12-24 | 2026-12-24 | 450 | 91d |  |  |
| 452 | 2.3.20.13 | Owner Training | 1d | 2026-12-24 | 2026-12-24 | 450 | 91d |  |  |
| 453 | 2.3.20.14 | Site Improvements | 1d | 2026-12-24 | 2026-12-24 | 450 | 84d | 0d |  |
| 454 | 2.3.20.15 | Painting & Coating | 5d | 2026-12-25 | 2026-12-31 | 453 | 84d | 0d |  |
| 455 | 2.3.20.16 | Punchlist | 2d | 2027-01-01 | 2027-01-04 | 454 | 84d |  |  |

| ID | WBS | Task | Duration | Start | Finish | Predecessors | Total slack | Free slack | Constraint |
| --- | --- | --- | --- | --- | --- | --- | --- | --- | --- |
| 456 | 2.3.21 | **ARN-W-018-01 - ON HOLD - 7-31-25** | 96d | 2026-09-01 | 2027-01-12 |  | 78d |  |  |
| 457 | 2.3.21.1 | Mobilization | 1d | 2026-09-01 | 2026-09-01 |  | 97d | 0d | start no earlier than 2026-09-01 |
| 458 | 2.3.21.2 | Demo, Removal, Relocate and Abandonment | 6d | 2026-09-02 | 2026-09-09 | 457 | 97d | 0d |  |
| 459 | 2.3.21.3 | Foundations & Vessel Anchorage | 13d | 2026-09-10 | 2026-09-28 | 458 | 97d | 0d |  |
| 460 | 2.3.21.4 | Foundation (Cure) | 7d | 2026-09-29 | 2026-10-07 | 459 | 97d | 19d |  |
| 461 | 2.3.21.5 | Vessel Offloading & Assembly | 8d | 2026-11-04 | 2026-11-13 | 460, 38 | 78d | 0d |  |
| 462 | 2.3.21.6 | Station Piping Installation | 19d | 2026-11-16 | 2026-12-10 | 461 | 78d | 0d |  |
| 463 | 2.3.21.7 | Pipe Pressure Testing | 1d | 2026-12-11 | 2026-12-11 | 462 | 99d | 0d |  |
| 464 | 2.3.21.8 | Vessel Pressure Testing | 1d | 2026-12-14 | 2026-12-14 | 463 | 99d |  |  |
| 465 | 2.3.21.9 | Electrical, Control, & Instrumentation | 15d | 2026-12-04 | 2026-12-24 | 462FS-5d | 78d | 0d |  |
| 466 | 2.3.21.10 | Startup & Commissioning | 5d | 2026-12-25 | 2026-12-31 | 462, 459, 461, 465 | 84d | 0d |  |
| 467 | 2.3.21.11 | Media Loading | 1d | 2027-01-01 | 2027-01-01 | 466 | 85d |  |  |
| 468 | 2.3.21.12 | Owner Training | 1d | 2027-01-01 | 2027-01-01 | 466 | 85d |  |  |
| 469 | 2.3.21.13 | Site Improvements | 6d | 2026-12-25 | 2027-01-01 | 465 | 78d | 0d |  |
| 470 | 2.3.21.14 | Painting & Coating | 5d | 2027-01-04 | 2027-01-08 | 469 | 78d | 0d |  |
| 471 | 2.3.21.15 | Punchlist | 2d | 2027-01-11 | 2027-01-12 | 465, 466, 469, 470 | 78d |  |  |
