# 116_SC_123 Tank Mixing & Dosing

Schedule from MS Project, 2024-12-06 to 2026-10-26, costs in $, A marks actual dates.
California Water Service Co.
SNGO 1/25/2025,PM VALIDATION 02/06/2024;Manager (Mary) validation complete 2/8/2024

## Calendars

- Trades - 5 Day Workweek: Mon-Fri 08:00-12:00, 13:00-17:00; Sat-Sun off. Exceptions (off unless hours are given): 2024-12-24 to 2024-12-25, 2025-01-01, 2025-02-17, 2025-05-19 08:00-16:00, 2025-05-23, 2025-05-26, 2025-07-04, 2025-07-07, 2025-08-29, 2025-09-01, 2025-11-11 08:00-16:00, 2025-11-27 to 2025-11-28, 2025-12-24 to 2025-12-26, 2026-01-01.

## Resources

| Resource | Group | Rate |
| --- | --- | --- |
| Technician |  | 89.85 |
| Environmental PM |  | 121.41 |
| Electrical Engineer |  | 121.41 |
| District Superintendent |  | 107.03 |
| Vendor Supplier |  |  |
| Surveyor |  |  |
| SCADA Technician |  | 89.85 |
| Engineering Services |  |  |
| EMT |  | 97.22 |
| District Field Staff |  | 75.29 |
| Construction Manager |  |  |
| Construction Contractor |  |  |
| Serna; Abraham (Michael) | Engineer CapProject Delivery | 121.41 |
| Dillender; Angelica | Engineer CapProject Delivery |  |
| Cost Engineer |  | 121.41 |
| Water Quality PM |  | 121.41 |
| Construction Manager RPLC |  |  |
| Capital Budget Technician |  | 89.85 |
| April STart - Resource limitations |  |  |
| Healey; William | Engineer CapProject Delivery | 121.41 |
| Kaur; Gurkiran | Engineer CapProject Delivery |  |
| Project Manager |  | 121.41 |
| 10 |  |  |

## Schedule

| ID | WBS | Task | Type | Duration | Start | Finish | Predecessors | Complete | Remaining | Total slack | Free slack | Constraint | Resources | Work | Actual work | Cost | Actual cost |
| --- | --- | --- | --- | --- | --- | --- | --- | --- | --- | --- | --- | --- | --- | --- | --- | --- | --- |
| 1 | 1 | **Preliminary Design** |  | 171d | 2024-12-06 A | 2025-08-13 A |  | 100% |  |  |  |  |  |  |  |  |  |
| 2 | 1.1 | RFP Due | milestone | 0d | 2024-12-06 A | 2024-12-06 A |  | 100% |  |  |  |  |  |  |  |  |  |
| 3 | 1.2 | Review and Award |  | 48d | 2024-12-06 A | 2025-02-14 A |  | 100% |  |  |  |  |  |  |  |  |  |
| 4 | 1.3 | Contracts |  | 27d | 2025-02-18 A | 2025-03-26 A | 3 | 100% |  |  |  |  |  |  |  |  |  |
| 5 | 1.4 | PO / NTP Issued |  | 38d | 2025-03-26 A | 2025-05-19 A | 4 | 100% |  |  |  |  |  |  |  |  |  |
| 6 | 1.5 | QA/QC Plan |  | 60d | 2025-05-20 A | 2025-08-13 A | 4, 5 | 100% |  |  |  |  |  |  |  |  |  |
| 7 | 1.6 | Subcontracts / Purchase Orders |  | 11d | 2025-05-20 A | 2025-06-04 A | 4, 5 | 100% |  |  |  |  |  |  |  |  |  |
| 8 | 2 | **Final Design** |  | 131d | 2025-06-05 A | 2025-12-12 A |  | 100% |  |  |  |  | Healey; William [7%] | 73.36h | 73.36h | 8,906.64 | 8,906.64 |
| 9 | 2.1 | Design Investigation and Survey |  | 20d | 2025-06-05 A | 2025-07-02 A |  | 100% |  |  |  | start no earlier than 2025-06-05 |  |  |  |  |  |
| 10 | 2.2 | **50% Design** |  | 37d | 2025-07-03 A | 2025-08-26 A |  | 100% |  |  |  |  |  |  |  |  |  |
| 11 | 2.2.1 | 50% Design Submittal |  | 20d | 2025-07-03 A | 2025-08-01 A | 9 | 100% |  |  |  |  |  |  |  |  |  |
| 12 | 2.2.2 | 50% Design CWS Submittal Review |  | 15d | 2025-08-04 A | 2025-08-22 A | 11 | 100% |  |  |  |  |  |  |  |  |  |
| 13 | 2.2.3 | 50% Design Submittal Workshop |  | 2d | 2025-08-25 A | 2025-08-26 A | 12 | 100% |  |  |  |  |  |  |  |  |  |
| 14 | 2.3 | **75% Design** |  | 37d | 2025-08-27 A | 2025-10-20 A |  | 100% |  |  |  |  |  |  |  |  |  |
| 15 | 2.3.1 | 75% Design Submittal |  | 20d | 2025-08-27 A | 2025-09-25 A | 13 | 100% |  |  |  |  |  |  |  |  |  |
| 16 | 2.3.2 | 75% Design CWS Submittal Review |  | 15d | 2025-09-26 A | 2025-10-16 A | 15 | 100% |  |  |  |  |  |  |  |  |  |
| 17 | 2.3.3 | 75% Design Submittal Workshop |  | 2d | 2025-10-17 A | 2025-10-20 A | 16 | 100% |  |  |  |  |  |  |  |  |  |
| 18 | 2.4 | **100% Design** |  | 37d | 2025-10-21 A | 2025-12-12 A |  | 100% |  |  |  |  |  |  |  |  |  |
| 19 | 2.4.1 | 100% Design Submittal |  | 20d | 2025-10-21 A | 2025-11-17 A | 17 | 100% |  |  |  |  |  |  |  |  |  |
| 20 | 2.4.2 | 100% Design CWS Submittal |  | 15d | 2025-11-18 A | 2025-12-10 A | 19 | 100% |  |  |  |  |  |  |  |  |  |
| 21 | 2.4.3 | 100% Design Submittal Workshop |  | 2d | 2025-12-11 A | 2025-12-12 A | 20 | 100% |  |  |  |  |  |  |  |  |  |
| 22 | 3 | **Final Permitting** |  | 140d | 2025-12-15 A | 2026-07-02 |  | 3% | 135.64d | 82d |  |  | Healey; William [6%] | 68.16h | 2.12h | 8,275.31 | 257.58 |
| 23 | 3.1 | Planning Permit Application |  | 45d | 2025-12-15 A | 2026-02-19 | 21 |  | 45d | 177d |  |  |  |  |  |  |  |
| 24 | 3.2 | Grading/Draining Permit Application |  | 45d | 2025-12-15 A | 2026-02-19 | 21 |  | 45d | 177d |  |  |  |  |  |  |  |
| 25 | 3.3 | Building Permit Application |  | 140d | 2025-12-15 A | 2026-07-02 | 21 |  | 140d | 2d | 0d |  |  |  |  |  |  |
| 26 | 3.4 | Issue for Construction Design Submittal |  | 8d | 2025-12-15 A | 2025-12-29 A | 21 | 100% |  |  |  |  |  |  |  |  |  |
| 27 | 3.5 | Issue for Construction Design CWS Submittal Review |  | 16d | 2025-12-30 A | 2026-01-21 | 26 |  | 16d | 0d |  |  |  |  |  |  |  |
| 28 | 3.6 | Project Drawings Issued for Construction |  | 3d | 2026-01-22 A | 2026-01-26 | 27 |  | 3d | 115d | 0d |  |  |  |  |  |  |

| ID | WBS | Task | Duration | Start | Finish | Predecessors | Complete | Remaining | Total slack | Free slack | Resources | Work | Cost |
| --- | --- | --- | --- | --- | --- | --- | --- | --- | --- | --- | --- | --- | --- |
| 29 | 8 | **Project Submittals and Procurement** | 130d | 2025-08-25 A | 2026-03-04 |  | 57% | 56.52d | 92d |  |  |  |  |
| 30 | 8.1 | **Project Submittals** | 30d | 2025-08-25 A | 2025-10-07 A |  | 100% |  |  |  |  |  |  |
| 31 | 8.1.1 | Chemical Equipment Submittals | 30d | 2025-08-25 A | 2025-10-07 A | 11 | 100% |  |  |  |  |  |  |
| 32 | 8.1.2 | Misc Materials Submittals | 30d | 2025-08-25 A | 2025-10-07 A | 31SS | 100% |  |  |  |  |  |  |
| 33 | 8.1.3 | Pipe and Fitting Submittals | 30d | 2025-08-25 A | 2025-10-07 A | 31SS | 100% |  |  |  |  |  |  |
| 34 | 8.2 | **Procurement** | 100d | 2025-10-08 A | 2026-03-04 |  | 29% | 71.43d | 92d |  |  |  |  |
| 35 | 8.2.1 | Chemical Equipment Procurement | 100d | 2025-10-08 A | 2026-03-04 | 31 |  | 100d | 92d |  |  |  |  |
| 36 | 8.2.2 | Pipe and Fitting and Misc Materials Procurement | 40d | 2025-10-08 A | 2025-12-04 A | 32, 33 | 100% |  |  |  |  |  |  |
| 37 | 5 | **Construction** | 179d | 2026-01-08 A | 2026-09-15 |  |  | 179d | 8d |  | Healey; William [10%] | 143.2h | 17,385.91 |
| 38 | 5.1 | USA Site | 3d | 2026-07-02 A | 2026-07-06 | 25FS-3d |  | 3d | 0d |  |  |  |  |
| 39 | 5.2 | Pothole Site | 4d | 2026-01-08 A | 2026-07-10 | 25, 28, 38 |  | 4d | 0d |  |  |  |  |
| 40 | 5.3 | Grade and Pour Pad / Install FRP Building | 15d | 2026-07-13 A | 2026-07-31 | 35, 39 |  | 15d | 0d |  |  |  |  |
| 41 | 5.4 | **Installation** | 32d | 2026-08-03 A | 2026-09-15 |  |  | 32d | 8d |  |  |  |  |
| 42 | 5.4.1 | Install Underground Water / Chemical Conduit | 6d | 2026-08-03 A | 2026-08-10 | 39, 40 |  | 6d | 0d |  |  |  |  |
| 43 | 5.4.2 | Install Underground Electrical | 3d | 2026-08-11 A | 2026-08-13 | 42 |  | 3d | 0d |  |  |  |  |
| 44 | 5.4.3 | Install Conduits on Tank | 6d | 2026-08-14 | 2026-08-21 | 43 |  |  | 0d |  |  |  |  |
| 45 | 5.4.4 | Install Chemical Injection System | 6d | 2026-08-24 | 2026-08-31 | 40, 44 |  |  | 0d |  |  |  |  |
| 46 | 5.4.5 | Electrical Install | 11d | 2026-09-01 | 2026-09-15 | 45 |  |  | 8d | 0d |  |  |  |
| 47 | 5.4.6 | Install Eye Wash and Sample Station | 4d | 2026-09-01 | 2026-09-04 | 45 |  |  | 0d |  |  |  |  |
| 48 | 6 | **Startup and Testing** | 21d | 2026-09-16 | 2026-10-14 |  |  |  | 8d |  | Healey; William [83%] | 139.44h | 16,929.41 |
| 49 | 6.1 | Address Punchlist Items | 10d | 2026-09-16 | 2026-09-29 | 46, 47 |  |  | 19d |  |  |  |  |
| 50 | 6.2 | Startup and Testing | 5d | 2026-09-16 | 2026-09-22 | 46, 47 |  |  | 12d | 0d |  |  |  |
| 51 | 6.3 | **Final Inspection By Authority Having Jurisdiction** | 20d | 2026-09-16 | 2026-10-13 |  |  |  | 8d |  |  |  |  |
| 52 | 6.3.1 | City or Fire Department Sign-off | 15d | 2026-09-16 | 2026-10-06 | 46, 47 |  |  | 13d | 5d |  |  |  |
| 53 | 6.3.2 | DDW Permit Amendment Approval | 10d | 2026-09-23 | 2026-10-06 | 50 |  |  | 12d | 0d |  |  |  |
| 54 | 6.3.3 | Planning Inspection | 15d | 2026-09-16 | 2026-10-06 | 46, 47 |  |  | 8d | 0d |  |  |  |
| 55 | 6.3.4 | Station Placed in Service | 1d | 2026-10-07 | 2026-10-07 | 53 |  |  | 12d |  |  |  |  |
| 56 | 6.3.5 | Final AHJ Punchlist Items | 5d | 2026-10-07 | 2026-10-13 | 54 |  |  | 8d | 0d |  |  |  |
| 57 | 6.4 | All Inspections Completed | 1d | 2026-10-14 | 2026-10-14 | 52, 53, 54, 56 |  |  | 8d |  |  |  |  |

| ID | WBS | Task | Duration | Start | Finish | Predecessors | Total slack |
| --- | --- | --- | --- | --- | --- | --- | --- |
| 58 | 7 | **Final Close-Out** | 36d | 2026-09-07 | 2026-10-26 |  | 0d |
| 59 | 7.1 | Cleanup and Demobe | 5d | 2026-09-07 | 2026-09-11 | 47 | 0d |
| 60 | 7.2 | Receive and Approve All Outstanding Invoices | 15d | 2026-09-14 | 2026-10-02 | 59 | 0d |
| 61 | 7.3 | Complete Financial As-built & Final Accounting Approval | 15d | 2026-10-05 | 2026-10-23 | 60 | 0d |
| 62 | 7.4 | Final Close-Out Completed | 1d | 2026-10-26 | 2026-10-26 | 61, 55 | 0d |
