# 116_SC_106 Tank Mixing & Dosing

Schedule from MS Project, 2024-12-06 to 2026-11-16, costs in $, A marks actual dates.
California Water Service Co.
WH PM Schedule Validation - 1/25/24;Manager (Mary) validation complete 2/5/2024

## Calendars

- Trades - 5 Day Workweek: Mon-Fri 08:00-12:00, 13:00-17:00; Sat-Sun off. Exceptions (off unless hours are given): 2024-12-24 to 2024-12-25, 2025-01-01, 2025-02-17, 2025-05-19 08:00-16:00, 2025-05-23, 2025-05-26, 2025-07-04, 2025-07-07, 2025-08-29, 2025-09-01, 2025-11-11 08:00-16:00, 2025-11-27 to 2025-11-28, 2025-12-24 to 2025-12-26, 2026-01-01.

## Resources

| Resource | Group | Rate |
| --- | --- | --- |
| Technician |  | 89.85 |
| Project Manager |  | 121.41 |
| Environmental PM |  | 121.41 |
| District Superintendent |  | 107.03 |
| Vendor Supplier |  |  |
| Surveyor |  |  |
| SCADA Technician |  | 89.85 |
| Engineering Services |  |  |
| EMT |  | 97.22 |
| District Field Staff |  | 75.29 |
| Construction Manager |  |  |
| Construction Contractor |  |  |
| Serna; Abraham (Michael) | Engineer CapProject Delivery | 121.41 |
| Healey; William | Engineer CapProject Delivery | 121.41 |
| Kaur; Gurkiran | Engineer CapProject Delivery |  |

## Schedule

| ID | WBS | Task | Type | Duration | Start | Finish | Predecessors | Complete | Remaining | Total slack | Free slack | Constraint | Resources | Work | Actual work | Cost | Actual cost |
| --- | --- | --- | --- | --- | --- | --- | --- | --- | --- | --- | --- | --- | --- | --- | --- | --- | --- |
| 1 | 1 | **Preliminary Design** |  | 173d | 2024-12-06 A | 2025-08-15 A |  | 100% |  |  |  |  |  |  |  |  |  |
| 2 | 1.1 | RFP Due | milestone | 0d | 2024-12-06 A | 2024-12-06 A |  | 100% |  |  |  |  |  |  |  |  |  |
| 3 | 1.2 | Review and Award |  | 48d | 2024-12-06 A | 2025-02-14 A |  | 100% |  |  |  |  |  |  |  |  |  |
| 4 | 1.3 | Contracts |  | 27d | 2025-02-18 A | 2025-03-26 A | 3 | 100% |  |  |  |  |  |  |  |  |  |
| 5 | 1.4 | PO / NTP Issued |  | 38d | 2025-03-26 A | 2025-05-19 A | 4 | 100% |  |  |  |  |  |  |  |  |  |
| 6 | 1.5 | QA/QC Plan |  | 60d | 2025-05-20 A | 2025-08-15 A | 4, 5 | 100% |  |  |  |  |  |  |  |  |  |
| 7 | 1.6 | Subcontracts / Purchase Orders |  | 10d | 2025-05-20 A | 2025-06-04 A | 4, 5 | 100% |  |  |  | start no earlier than 2023-03-14 |  |  |  |  |  |
| 8 | 2 | **Final Design** |  | 131d | 2025-06-05 A | 2025-12-12 A |  | 100% |  |  |  |  | Healey; William [7%] | 73.36h | 73.36h | 8,906.64 | 8,906.64 |
| 9 | 2.1 | Design Investigation and Survey |  | 20d | 2025-06-05 A | 2025-07-02 A | 7 | 100% |  |  |  | start no earlier than 2025-06-05 |  |  |  |  |  |
| 10 | 2.2 | **50% Design** |  | 37d | 2025-07-03 A | 2025-08-26 A |  | 100% |  |  |  |  |  |  |  |  |  |
| 11 | 2.2.1 | 50% Design Submittal |  | 20d | 2025-07-03 A | 2025-08-01 A | 9 | 100% |  |  |  |  |  |  |  |  |  |
| 12 | 2.2.2 | 50% Design CWS Submittal Review |  | 15d | 2025-08-04 A | 2025-08-22 A | 11 | 100% |  |  |  |  |  |  |  |  |  |
| 13 | 2.2.3 | 50% Design Submittal Workshop |  | 2d | 2025-08-25 A | 2025-08-26 A | 12 | 100% |  |  |  |  |  |  |  |  |  |
| 14 | 2.3 | **75% Design** |  | 37d | 2025-08-27 A | 2025-10-20 A |  | 100% |  |  |  |  |  |  |  |  |  |
| 15 | 2.3.1 | 75% Design Submittal |  | 20d | 2025-08-27 A | 2025-09-25 A | 13 | 100% |  |  |  |  |  |  |  |  |  |
| 16 | 2.3.2 | 75% Design CWS Submittal Review |  | 15d | 2025-09-26 A | 2025-10-16 A | 15 | 100% |  |  |  |  |  |  |  |  |  |
| 17 | 2.3.3 | 75% Design Submittal Workshop |  | 2d | 2025-10-17 A | 2025-10-20 A | 16 | 100% |  |  |  |  |  |  |  |  |  |
| 18 | 2.4 | **100% Design** |  | 37d | 2025-10-21 A | 2025-12-12 A |  | 100% |  |  |  |  |  |  |  |  |  |
| 19 | 2.4.1 | 100% Design Submittal |  | 20d | 2025-10-21 A | 2025-11-17 A | 17 | 100% |  |  |  |  |  |  |  |  |  |
| 20 | 2.4.2 | 100% Design CWS Submittal |  | 15d | 2025-11-18 A | 2025-12-10 A | 19 | 100% |  |  |  |  |  |  |  |  |  |
| 21 | 2.4.3 | 100% Design Submittal Workshop |  | 2d | 2025-12-11 A | 2025-12-12 A | 20 | 100% |  |  |  |  |  |  |  |  |  |
| 22 | 3 | **Final Permitting** |  | 143d | 2025-12-15 A | 2026-07-07 |  | 3% | 138.6d | 94d |  |  | Healey; William [6%] | 69.6h | 2.14h | 8,450.14 | 260 |
| 23 | 3.1 | Planning Permit Application |  | 45d | 2025-12-15 A | 2026-02-19 | 21 |  | 45d | 192d |  |  |  |  |  |  |  |
| 24 | 3.2 | Grading/Draining Permit Application |  | 45d | 2025-12-15 A | 2026-02-19 | 21 |  | 45d | 192d |  |  |  |  |  |  |  |
| 25 | 3.3 | Building Permit Application |  | 143d | 2025-12-15 A | 2026-07-07 | 21 |  | 143d | 0d |  |  |  |  |  |  |  |
| 26 | 3.4 | Issue for Construction Design Submittal |  | 8d | 2025-12-15 A | 2025-12-29 A | 21 | 100% |  |  |  |  |  |  |  |  |  |
| 27 | 3.5 | Issue for Construction Design CWS Submittal Review |  | 16d | 2025-12-30 | 2026-01-21 | 26 |  |  | 116d | 0d |  |  |  |  |  |  |
| 28 | 3.6 | Project Drawings Issued for Construction |  | 3d | 2026-01-22 | 2026-01-26 | 27 |  |  | 116d |  |  |  |  |  |  |  |

| ID | WBS | Task | Duration | Start | Finish | Predecessors | Complete | Remaining | Total slack | Free slack | Constraint | Resources | Work | Cost |
| --- | --- | --- | --- | --- | --- | --- | --- | --- | --- | --- | --- | --- | --- | --- |
| 29 | 4 | **Project Submittals and Procurement** | 130d | 2025-08-25 A | 2026-03-04 |  | 57% | 56.52d | 92d |  |  |  |  |  |
| 30 | 4.1 | **Project Submittals** | 30d | 2025-08-25 A | 2025-10-07 A |  | 100% |  |  |  |  |  |  |  |
| 31 | 4.1.1 | Chemical Equipment Submittals | 30d | 2025-08-25 A | 2025-10-07 A | 12 | 100% |  |  |  |  |  |  |  |
| 32 | 4.1.2 | Misc Materials Submittals | 30d | 2025-08-25 A | 2025-10-07 A | 31SS | 100% |  |  |  |  |  |  |  |
| 33 | 4.1.3 | Pipe and Fitting Submittals | 30d | 2025-08-25 A | 2025-10-07 A | 31SS | 100% |  |  |  |  |  |  |  |
| 34 | 4.2 | **Procurement** | 100d | 2025-10-08 A | 2026-03-04 |  | 29% | 71.43d | 92d |  |  |  |  |  |
| 35 | 4.2.1 | Chemical Equipment Procurement | 100d | 2025-10-08 A | 2026-03-04 | 31 |  | 100d | 92d |  |  |  |  |  |
| 36 | 4.2.2 | Pipe and Fitting and Misc Materials Procurement | 40d | 2025-10-08 A | 2025-12-04 A | 32, 33 | 100% |  |  |  |  |  |  |  |
| 37 | 5 | **Construction** | 62d | 2026-07-02 A | 2026-09-25 |  |  | 62d | 0d |  |  | Healey; William [10%] | 41.6h | 5,050.66 |
| 38 | 5.1 | USA Site | 3d | 2026-07-02 A | 2026-07-06 |  |  | 3d | 1d |  | start no earlier than 2026-09-24 |  |  |  |
| 39 | 5.2 | Pothole Site | 3d | 2026-07-08 | 2026-07-10 | 25, 28, 38 |  |  | 0d |  |  |  |  |  |
| 40 | 5.3 | **Construction for Site Improvements** | 55d | 2026-07-13 | 2026-09-25 |  |  |  | 0d |  |  |  |  |  |
| 41 | 5.3.1 | Grade and Pour Pad / Install FRP Building | 15d | 2026-07-13 | 2026-07-31 | 35, 39 |  |  | 0d |  |  |  |  |  |
| 42 | 5.3.2 | Install Underground Water / Chemical Conduit | 5d | 2026-08-03 | 2026-08-07 | 41 |  |  | 0d |  |  |  |  |  |
| 43 | 5.3.3 | Install Underground Electrical | 2d | 2026-08-10 | 2026-08-11 | 42 |  |  | 0d |  |  |  |  |  |
| 44 | 5.3.4 | Install Conduits on Tank | 6d | 2026-08-12 | 2026-08-19 | 43 |  |  | 0d |  |  |  |  |  |
| 45 | 5.3.5 | Install Chemical Injection System | 6d | 2026-08-20 | 2026-08-27 | 41, 44 |  |  | 0d |  |  |  |  |  |
| 46 | 5.3.6 | Electrical Install | 11d | 2026-08-28 | 2026-09-11 | 45 |  |  | 0d |  |  |  |  |  |
| 47 | 5.3.7 | Install Eye Wash and Sample Station | 4d | 2026-08-28 | 2026-09-02 | 45 |  |  | 7d |  |  |  |  |  |
| 48 | 5.3.8 | Cleanup and Demobe | 5d | 2026-09-21 | 2026-09-25 | 51 |  |  | 0d |  |  |  |  |  |
| 49 | 6 | **Startup and Testing** | 21d? | 2026-09-14 | 2026-10-12 |  |  |  | 0d |  |  | Healey; William [83%] | 139.44h | 16,929.41 |
| 50 | 6.1 | Address Punchlist Items | 10d | 2026-09-14 | 2026-09-25 | 46, 47 |  |  | 36d |  |  |  |  |  |
| 51 | 6.2 | Startup and Testing | 5d | 2026-09-14 | 2026-09-18 | 46, 47 |  |  | 0d |  |  |  |  |  |
| 52 | 6.3 | **Final Inspection By Authority Having Jurisdiction** | 20d? | 2026-09-14 | 2026-10-09 |  |  |  | 25d |  |  |  |  |  |
| 53 | 6.3.1 | City or Fire Department Sign-off | 15d | 2026-09-14 | 2026-10-02 | 46, 47 |  |  | 30d | 5d |  |  |  |  |
| 54 | 6.3.2 | DDW Permit Amendment Approval | 10d | 2026-09-21 | 2026-10-02 | 51 |  |  | 29d | 0d |  |  |  |  |
| 55 | 6.3.3 | Planning Inspection | 15d | 2026-09-14 | 2026-10-02 | 46, 47 |  |  | 25d | 0d |  |  |  |  |
| 56 | 6.3.4 | Station Placed in Service | 1d? | 2026-10-05 | 2026-10-05 | 54 |  |  | 29d |  |  |  |  |  |
| 57 | 6.3.5 | Final AHJ Punchlist Items | 5d | 2026-10-05 | 2026-10-09 | 55 |  |  | 25d | 0d |  |  |  |  |
| 58 | 6.4 | All Inspections Completed | 1d? | 2026-10-12 | 2026-10-12 | 53, 54, 55, 57 |  |  | 25d |  |  |  |  |  |

| ID | WBS | Task | Duration | Start | Finish | Predecessors | Total slack |
| --- | --- | --- | --- | --- | --- | --- | --- |
| 59 | 7 | **Final Close-Out** | 36d? | 2026-09-28 | 2026-11-16 |  | 0d |
| 60 | 7.1 | Cleanup and Demobe | 5d | 2026-09-28 | 2026-10-02 | 48 | 0d |
| 61 | 7.2 | Receive and Approve All Outstanding Invoices | 15d | 2026-10-05 | 2026-10-23 | 60 | 0d |
| 62 | 7.3 | Complete Financial As-built & Final Accounting Approval | 15d | 2026-10-26 | 2026-11-13 | 61 | 0d |
| 63 | 7.4 | Final Close-Out Completed | 1d? | 2026-11-16 | 2026-11-16 | 56, 62 | 0d |
