# SocGen Implementation Project Plan

Schedule from MS Project, 2015-09-24 to 2016-11-09, status date 2016-06-27, costs in $, A marks actual dates.
Hewlett-Packard

## Calendars

- Standard: Mon-Fri 08:00-12:00, 13:00-17:00; Sat-Sun off.

## Resources

| Resource | Rate |
| --- | --- |
| Configuration Specialist 1 | 100 |
| Configuration Specialist 2 | 100 |
| Configuration Specialist 3 | 100 |
| IT | 100 |
| PM | 120 |
| SME | 120 |
| SA | 120 |
| SocGen Configuration Specialist 1 |  |
| Implementation Lead | 100 |
| Alexander Rodov; PMP; CSM; MCTS (Trusted IT Group) | 222 |
| Jerry | 60 |

## Schedule

| ID | WBS | Task | Type | Duration | Start | Finish | Predecessors | Complete | Remaining | Baseline start | Baseline finish | Baseline duration | Total slack | Free slack | Constraint | Resources | Work | Actual work | Cost | Baseline cost | Actual cost |
| --- | --- | --- | --- | --- | --- | --- | --- | --- | --- | --- | --- | --- | --- | --- | --- | --- | --- | --- | --- | --- | --- |
| 1 | 1 | Project Planning |  | 20d | 2015-09-24 A | 2015-10-22 |  | 79% | 4.25d | 2015-09-24 | 2015-10-22 | 20d | 3.5d | 0d | start no earlier than 2015-09-24 | PM | 160h | 126h | 19,200 | 19,200 | 15,120 |
| 2 | 2 | System Setup, permissions, form on-boarding |  | 3d | 2015-09-24 A | 2015-09-28 A |  | 100% |  | 2015-09-24 | 2015-09-28 | 3d |  |  | start no earlier than 2015-09-24 | IT | 24h | 24h | 2,400 | 2,400 | 2,400 |
| 3 | 3 | IT Support |  | 280d | 2015-10-13 A | 2016-11-07 | 11 | 5% | 266d | 2015-10-13 | 2016-11-07 | 280d | 2d |  |  | IT [10%]; Alexander Rodov; PMP; CSM; MCTS (Trusted IT Group); Jerry | 4480h | 11.2h | 277,760 | 277,760 | 1,120 |
| 4 | 4 | SA |  | 5d | 2015-10-26 A | 2015-10-30 | 1 | 50% | 2.5d | 2015-10-26 | 2015-10-30 | 5d | 1d | 0d |  | SA | 40h | 20h | 4,800 | 4,800 | 2,400 |
| 5 | 5 | SA Support |  | 267d | 2015-11-02 | 2016-11-08 | 4 |  |  | 2015-11-02 | 2016-11-08 | 267d | 1d |  |  | SA [1.7%] | 35.96h |  | 4,315.15 | 4,315.15 |  |
| 6 | 6 | **AxiomSL Configuration, unit testing, and functional testing support** |  | 191d | 2015-09-24 A | 2016-06-16 |  | 31% | 132.53d | 2015-09-24 | 2016-06-16 | 191d |  |  |  |  | 2148h | 191.68h | 219,264 | 219,264 | 19,504 |
| 7 | 6.1 | Project Manager |  | 140d | 2015-10-23 | 2016-05-05 | 1 |  |  | 2015-10-23 | 2016-05-05 | 140d | 134d |  |  | PM [20%] | 224h |  | 26,880 | 26,880 |  |
| 8 | 6.2 | Implementation Lead |  | 157d | 2015-10-02 A | 2016-05-11 | 10 | 10% | 141.2d | 2015-10-02 | 2016-05-11 | 157d | 130.4d |  |  | Implementation Lead [70%] | 879.2h | 88.48h | 87,920 | 87,920 | 8,848 |
| 9 | 6.3 | SME |  | 156d | 2015-10-02 A | 2016-05-09 A | 10 | 100% |  | 2015-10-02 | 2016-05-09 | 156d |  |  |  |  |  |  |  |  |  |
| 10 | 6.4 | Requirements Review and Design sessions |  | 5.5d | 2015-09-24 A | 2015-10-01 |  | 60% | 2.2d | 2015-09-24 | 2015-10-01 | 5.5d | 17.9d | 1.1d | start no earlier than 2015-09-24 | Implementation Lead; SA; Alexander Rodov; PMP; CSM; MCTS (Trusted IT Group) | 96h | 43.2h | 9,584 | 9,584 | 4,656 |
| 11 | 6.5 | Data Sourcing |  | 5d | 2015-10-13 A | 2015-10-19 | 2FS+4d | 50% | 2.5d | 2015-10-13 | 2015-10-19 | 5d | -5d | 0d |  | Configuration Specialist 2 | 40h | 20h | 4,000 | 4,000 | 2,000 |
| 12 | 6.6 | Template Onboarding |  | 4d | 2015-10-08 A | 2015-10-14 | 2FS+4d | 50% | 2d | 2015-10-08 | 2015-10-14 | 4d | -2d | 0d |  | Configuration Specialist 1 [40%] | 12.8h | 6.4h | 1,280 | 1,280 | 640 |
| 13 | 6.7 | Receipt and Review of Functional Specs (9C) | manual | 1d | 2015-09-24 | 2015-09-24 |  |  |  | 2015-09-24 | 2015-09-24 | 1d |  |  | start no earlier than 2015-10-30 |  |  |  |  |  |  |
| 14 | 6.8 | Receipt and Review of Functional Specs (9LP) | manual | 1d | 2015-09-24 | 2015-09-24 |  |  |  | 2015-09-24 | 2015-09-24 | 1d |  |  | start no earlier than 2015-11-30 |  |  |  |  |  |  |
| 15 | 6.9 | **FR-Y9C Configuration and Unit testing** |  | 79.2d | 2015-10-13 A | 2016-02-01 | 11, 12 | 6% | 74.2d | 2015-10-13 | 2016-02-01 | 79.2d | 202.8d |  |  |  | 896h | 33.6h | 89,600 | 89,600 | 3,360 |
| 16 | 6.9.1 | **N/A Schedules/ Preliminary Setup (HCE,HCI,HCP,HCS,HCV,HI-B,HI-C,HI-N,HC-C)** |  | 4.6d | 2015-10-15 A | 2015-10-21 |  | 60% | 1.84d | 2015-10-15 | 2015-10-21 | 4.6d | 275.4d |  |  |  | 32h | 19.2h | 3,200 | 3,200 | 1,920 |
| 17 | 6.9.1.1 | Configuration |  | 3d | 2015-10-15 A | 2015-10-20 | 12 | 80% | 0.6d | 2015-10-15 | 2015-10-20 | 3d | 275.4d | 0d |  | Configuration Specialist 2 | 24h | 19.2h | 2,400 | 2,400 | 1,920 |
| 18 | 6.9.1.2 | UT |  | 1d | 2015-10-20 | 2015-10-21 | 17 |  |  | 2015-10-20 | 2015-10-21 | 1d | 275.4d |  |  | Configuration Specialist 2 | 8h |  | 800 | 800 |  |
| 19 | 6.9.2 | **Priority Schedule (HCD)** |  | 14.2d | 2015-10-13 A | 2015-11-02 | 12 | 48% | 7.34d | 2015-10-13 | 2015-11-02 | 14.2d | 119.8d |  |  |  | 56h | 14.4h | 5,600 | 5,600 | 1,440 |
| 20 | 6.9.2.1 | Acceptance of Requirements |  | 2d | 2015-10-13 A | 2015-10-14 A |  | 100% |  | 2015-10-13 | 2015-10-14 | 2d |  |  |  |  |  |  |  |  |  |
| 21 | 6.9.2.2 | Acceptance of Expected Results |  | 2d | 2015-10-15 A | 2015-10-16 A |  | 100% |  | 2015-10-15 | 2015-10-16 | 2d |  |  |  |  |  |  |  |  |  |
| 22 | 6.9.2.3 | Configuration |  | 3d | 2015-10-16 A | 2015-10-21 | 20, 21 | 60% | 1.2d | 2015-10-16 | 2015-10-21 | 3d | 119.8d | 0d |  | Configuration Specialist 1 | 24h | 14.4h | 2,400 | 2,400 | 1,440 |
| 23 | 6.9.2.4 | UT |  | 1d | 2015-10-21 | 2015-10-22 | 22 |  |  | 2015-10-21 | 2015-10-22 | 1d | 119.8d | 0d |  | Configuration Specialist 1 | 8h |  | 800 | 800 |  |
| 24 | 6.9.2.5 | Migration to UAT |  | 1d | 2015-10-22 | 2015-10-23 | 23 |  |  | 2015-10-22 | 2015-10-23 | 1d | 119.8d | 0d |  |  |  |  |  |  |  |
| 25 | 6.9.2.6 | SIT Testing Support |  | 3d | 2015-10-28 | 2015-11-02 | 24FS+3d |  |  | 2015-10-28 | 2015-11-02 | 3d | 119.8d | 0d |  | Configuration Specialist 1 | 24h |  | 2,400 | 2,400 |  |

| ID | WBS | Task | Type | Duration | Start | Finish | Predecessors | Baseline start | Baseline finish | Baseline duration | Total slack | Free slack | Constraint | Resources | Work | Cost | Baseline cost |
| --- | --- | --- | --- | --- | --- | --- | --- | --- | --- | --- | --- | --- | --- | --- | --- | --- | --- |
| 26 | 6.9.3 | **Schedule HCB** |  | 11d | 2015-11-02 | 2015-11-17 | 25 | 2015-11-02 | 2015-11-17 | 11d | 161.8d |  |  |  | 56h | 5,600 | 5,600 |
| 27 | 6.9.3.1 | Acceptance of Requirements | milestone | 0d | 2015-11-02 | 2015-11-02 |  | 2015-11-02 | 2015-11-02 | 0d | 161.8d | 0d | start no earlier than 2015-10-16 |  |  |  |  |
| 28 | 6.9.3.2 | Acceptance of Expected Results | milestone | 0d | 2015-11-02 | 2015-11-02 |  | 2015-11-02 | 2015-11-02 | 0d | 161.8d | 0d |  |  |  |  |  |
| 29 | 6.9.3.3 | Configuration |  | 3d | 2015-11-02 | 2015-11-05 | 27, 28 | 2015-11-02 | 2015-11-05 | 3d | 161.8d | 0d | start no earlier than 2015-10-26 | Configuration Specialist 2 | 24h | 2,400 | 2,400 |
| 30 | 6.9.3.4 | UT |  | 1d | 2015-11-05 | 2015-11-06 | 29 | 2015-11-05 | 2015-11-06 | 1d | 161.8d | 0d |  | Configuration Specialist 2 | 8h | 800 | 800 |
| 31 | 6.9.3.5 | Migration to UAT |  | 1d | 2015-11-06 | 2015-11-09 | 30 | 2015-11-06 | 2015-11-09 | 1d | 161.8d | 0d |  |  |  |  |  |
| 32 | 6.9.3.6 | SIT Testing Support |  | 3d | 2015-11-12 | 2015-11-17 | 31FS+3d | 2015-11-12 | 2015-11-17 | 3d | 161.8d | 0d |  | Configuration Specialist 2 | 24h | 2,400 | 2,400 |
| 33 | 6.9.4 | **Schedule HCF** |  | 11d | 2015-11-02 | 2015-11-17 | 25 | 2015-11-02 | 2015-11-17 | 11d | 161.8d |  |  |  | 56h | 5,600 | 5,600 |
| 34 | 6.9.4.1 | Acceptance of Requirements | milestone | 0d | 2015-11-02 | 2015-11-02 |  | 2015-11-02 | 2015-11-02 | 0d | 161.8d | 0d |  |  |  |  |  |
| 35 | 6.9.4.2 | Acceptance of Expected Results | milestone | 0d | 2015-11-02 | 2015-11-02 |  | 2015-11-02 | 2015-11-02 | 0d | 161.8d | 0d |  |  |  |  |  |
| 36 | 6.9.4.3 | Configuration |  | 3d | 2015-11-02 | 2015-11-05 | 34, 35 | 2015-11-02 | 2015-11-05 | 3d | 161.8d | 0d |  | Configuration Specialist 3 | 24h | 2,400 | 2,400 |
| 37 | 6.9.4.4 | UT |  | 1d | 2015-11-05 | 2015-11-06 | 36 | 2015-11-05 | 2015-11-06 | 1d | 161.8d | 0d |  | Configuration Specialist 3 | 8h | 800 | 800 |
| 38 | 6.9.4.5 | Migration to UAT |  | 1d | 2015-11-06 | 2015-11-09 | 37 | 2015-11-06 | 2015-11-09 | 1d | 161.8d | 0d |  |  |  |  |  |
| 39 | 6.9.4.6 | SIT Testing Support |  | 3d | 2015-11-12 | 2015-11-17 | 38FS+3d | 2015-11-12 | 2015-11-17 | 3d | 161.8d | 0d |  | Configuration Specialist 3 | 24h | 2,400 | 2,400 |
| 40 | 6.9.5 | **Schedule HCG** |  | 11d | 2015-11-02 | 2015-11-17 | 25 | 2015-11-02 | 2015-11-17 | 11d | 119.8d |  |  |  | 56h | 5,600 | 5,600 |
| 41 | 6.9.5.1 | Acceptance of Requirements | milestone | 0d | 2015-11-02 | 2015-11-02 |  | 2015-11-02 | 2015-11-02 | 0d | 119.8d | 0d |  |  |  |  |  |
| 42 | 6.9.5.2 | Acceptance of Expected Results | milestone | 0d | 2015-11-02 | 2015-11-02 |  | 2015-11-02 | 2015-11-02 | 0d | 119.8d | 0d |  |  |  |  |  |
| 43 | 6.9.5.3 | Configuration |  | 3d | 2015-11-02 | 2015-11-05 | 41, 42 | 2015-11-02 | 2015-11-05 | 3d | 119.8d | 0d |  | Configuration Specialist 1 | 24h | 2,400 | 2,400 |
| 44 | 6.9.5.4 | UT |  | 1d | 2015-11-05 | 2015-11-06 | 43 | 2015-11-05 | 2015-11-06 | 1d | 119.8d | 0d |  | Configuration Specialist 1 | 8h | 800 | 800 |
| 45 | 6.9.5.5 | Migration to UAT |  | 1d | 2015-11-06 | 2015-11-09 | 44 | 2015-11-06 | 2015-11-09 | 1d | 119.8d | 0d |  |  |  |  |  |
| 46 | 6.9.5.6 | SIT Testing Support |  | 3d | 2015-11-12 | 2015-11-17 | 45FS+3d | 2015-11-12 | 2015-11-17 | 3d | 119.8d | 0d |  | Configuration Specialist 1 | 24h | 2,400 | 2,400 |
| 47 | 6.9.6 | **Schedule HCM** |  | 11d | 2015-11-17 | 2015-12-02 | 32 | 2015-11-17 | 2015-12-02 | 11d | 161.8d |  |  |  | 56h | 5,600 | 5,600 |
| 48 | 6.9.6.1 | Acceptance of Requirements | milestone | 0d | 2015-11-17 | 2015-11-17 |  | 2015-11-17 | 2015-11-17 | 0d | 161.8d | 0d |  |  |  |  |  |
| 49 | 6.9.6.2 | Acceptance of Expected Results | milestone | 0d | 2015-11-17 | 2015-11-17 |  | 2015-11-17 | 2015-11-17 | 0d | 161.8d | 0d |  |  |  |  |  |
| 50 | 6.9.6.3 | Configuration |  | 3d | 2015-11-17 | 2015-11-20 | 48, 49 | 2015-11-17 | 2015-11-20 | 3d | 161.8d | 0d |  | Configuration Specialist 2 | 24h | 2,400 | 2,400 |
| 51 | 6.9.6.4 | UT |  | 1d | 2015-11-20 | 2015-11-23 | 50 | 2015-11-20 | 2015-11-23 | 1d | 161.8d | 0d |  | Configuration Specialist 2 | 8h | 800 | 800 |
| 52 | 6.9.6.5 | Migration to UAT |  | 1d | 2015-11-23 | 2015-11-24 | 51 | 2015-11-23 | 2015-11-24 | 1d | 161.8d | 0d |  |  |  |  |  |
| 53 | 6.9.6.6 | SIT Testing Support |  | 3d | 2015-11-27 | 2015-12-02 | 52FS+3d | 2015-11-27 | 2015-12-02 | 3d | 161.8d | 0d |  | Configuration Specialist 2 | 24h | 2,400 | 2,400 |

| ID | WBS | Task | Type | Duration | Start | Finish | Predecessors | Baseline start | Baseline finish | Baseline duration | Total slack | Free slack | Resources | Work | Cost | Baseline cost |
| --- | --- | --- | --- | --- | --- | --- | --- | --- | --- | --- | --- | --- | --- | --- | --- | --- |
| 54 | 6.9.7 | **Schedule HC** |  | 11d | 2015-11-17 | 2015-12-02 | 39 | 2015-11-17 | 2015-12-02 | 11d | 161.8d |  |  | 56h | 5,600 | 5,600 |
| 55 | 6.9.7.1 | Acceptance of Requirements | milestone | 0d | 2015-11-17 | 2015-11-17 |  | 2015-11-17 | 2015-11-17 | 0d | 161.8d | 0d |  |  |  |  |
| 56 | 6.9.7.2 | Acceptance of Expected Results | milestone | 0d | 2015-11-17 | 2015-11-17 |  | 2015-11-17 | 2015-11-17 | 0d | 161.8d | 0d |  |  |  |  |
| 57 | 6.9.7.3 | Configuration |  | 3d | 2015-11-17 | 2015-11-20 | 55, 56 | 2015-11-17 | 2015-11-20 | 3d | 161.8d | 0d | Configuration Specialist 3 | 24h | 2,400 | 2,400 |
| 58 | 6.9.7.4 | UT |  | 1d | 2015-11-20 | 2015-11-23 | 57 | 2015-11-20 | 2015-11-23 | 1d | 161.8d | 0d | Configuration Specialist 3 | 8h | 800 | 800 |
| 59 | 6.9.7.5 | Migration to UAT |  | 1d | 2015-11-23 | 2015-11-24 | 58 | 2015-11-23 | 2015-11-24 | 1d | 161.8d | 0d |  |  |  |  |
| 60 | 6.9.7.6 | SIT Testing Support |  | 3d | 2015-11-27 | 2015-12-02 | 59FS+3d | 2015-11-27 | 2015-12-02 | 3d | 161.8d | 0d | Configuration Specialist 3 | 24h | 2,400 | 2,400 |
| 61 | 6.9.8 | **Schedule HCL** |  | 11d | 2015-11-17 | 2015-12-02 | 46 | 2015-11-17 | 2015-12-02 | 11d | 119.8d |  |  | 56h | 5,600 | 5,600 |
| 62 | 6.9.8.1 | Acceptance of Requirements | milestone | 0d | 2015-11-17 | 2015-11-17 |  | 2015-11-17 | 2015-11-17 | 0d | 119.8d | 0d |  |  |  |  |
| 63 | 6.9.8.2 | Acceptance of Expected Results | milestone | 0d | 2015-11-17 | 2015-11-17 |  | 2015-11-17 | 2015-11-17 | 0d | 119.8d | 0d |  |  |  |  |
| 64 | 6.9.8.3 | Configuration |  | 3d | 2015-11-17 | 2015-11-20 | 62, 63 | 2015-11-17 | 2015-11-20 | 3d | 119.8d | 0d | Configuration Specialist 1 | 24h | 2,400 | 2,400 |
| 65 | 6.9.8.4 | UT |  | 1d | 2015-11-20 | 2015-11-23 | 64 | 2015-11-20 | 2015-11-23 | 1d | 119.8d | 0d | Configuration Specialist 1 | 8h | 800 | 800 |
| 66 | 6.9.8.5 | Migration to UAT |  | 1d | 2015-11-23 | 2015-11-24 | 65 | 2015-11-23 | 2015-11-24 | 1d | 119.8d | 0d |  |  |  |  |
| 67 | 6.9.8.6 | SIT Testing Support |  | 3d | 2015-11-27 | 2015-12-02 | 66FS+3d | 2015-11-27 | 2015-12-02 | 3d | 119.8d | 0d | Configuration Specialist 1 | 24h | 2,400 | 2,400 |
| 68 | 6.9.9 | **Schedule HI** |  | 11d | 2015-12-02 | 2015-12-17 | 53 | 2015-12-02 | 2015-12-17 | 11d | 161.8d |  |  | 56h | 5,600 | 5,600 |
| 69 | 6.9.9.1 | Acceptance of Requirements | milestone | 0d | 2015-12-02 | 2015-12-02 |  | 2015-12-02 | 2015-12-02 | 0d | 161.8d | 0d |  |  |  |  |
| 70 | 6.9.9.2 | Acceptance of Expected Results | milestone | 0d | 2015-12-02 | 2015-12-02 |  | 2015-12-02 | 2015-12-02 | 0d | 161.8d | 0d |  |  |  |  |
| 71 | 6.9.9.3 | Configuration |  | 3d | 2015-12-02 | 2015-12-07 | 69, 70 | 2015-12-02 | 2015-12-07 | 3d | 161.8d | 0d | Configuration Specialist 2 | 24h | 2,400 | 2,400 |
| 72 | 6.9.9.4 | UT |  | 1d | 2015-12-07 | 2015-12-08 | 71 | 2015-12-07 | 2015-12-08 | 1d | 161.8d | 0d | Configuration Specialist 2 | 8h | 800 | 800 |
| 73 | 6.9.9.5 | Migration to UAT |  | 1d | 2015-12-08 | 2015-12-09 | 72 | 2015-12-08 | 2015-12-09 | 1d | 161.8d | 0d |  |  |  |  |
| 74 | 6.9.9.6 | SIT Testing Support |  | 3d | 2015-12-14 | 2015-12-17 | 73FS+3d | 2015-12-14 | 2015-12-17 | 3d | 161.8d | 0d | Configuration Specialist 2 | 24h | 2,400 | 2,400 |
| 75 | 6.9.10 | **Schedule HI-A** |  | 11d | 2015-12-02 | 2015-12-17 | 60 | 2015-12-02 | 2015-12-17 | 11d | 161.8d |  |  | 56h | 5,600 | 5,600 |
| 76 | 6.9.10.1 | Acceptance of Requirements | milestone | 0d | 2015-12-02 | 2015-12-02 |  | 2015-12-02 | 2015-12-02 | 0d | 161.8d | 0d |  |  |  |  |
| 77 | 6.9.10.2 | Acceptance of Expected Results | milestone | 0d | 2015-12-02 | 2015-12-02 |  | 2015-12-02 | 2015-12-02 | 0d | 161.8d | 0d |  |  |  |  |
| 78 | 6.9.10.3 | Configuration |  | 3d | 2015-12-02 | 2015-12-07 | 76, 77 | 2015-12-02 | 2015-12-07 | 3d | 161.8d | 0d | Configuration Specialist 3 | 24h | 2,400 | 2,400 |
| 79 | 6.9.10.4 | UT |  | 1d | 2015-12-07 | 2015-12-08 | 78 | 2015-12-07 | 2015-12-08 | 1d | 161.8d | 0d | Configuration Specialist 3 | 8h | 800 | 800 |
| 80 | 6.9.10.5 | Migration to UAT |  | 1d | 2015-12-08 | 2015-12-09 | 79 | 2015-12-08 | 2015-12-09 | 1d | 161.8d | 0d |  |  |  |  |
| 81 | 6.9.10.6 | SIT Testing Support |  | 3d | 2015-12-14 | 2015-12-17 | 80FS+3d | 2015-12-14 | 2015-12-17 | 3d | 161.8d | 0d | Configuration Specialist 3 | 24h | 2,400 | 2,400 |

| ID | WBS | Task | Type | Duration | Start | Finish | Predecessors | Baseline start | Baseline finish | Baseline duration | Total slack | Free slack | Resources | Work | Cost | Baseline cost |
| --- | --- | --- | --- | --- | --- | --- | --- | --- | --- | --- | --- | --- | --- | --- | --- | --- |
| 82 | 6.9.11 | **Schedule HCR (GL)** |  | 11d | 2015-12-02 | 2015-12-17 | 67 | 2015-12-02 | 2015-12-17 | 11d | 119.8d |  |  | 56h | 5,600 | 5,600 |
| 83 | 6.9.11.1 | Acceptance of Requirements | milestone | 0d | 2015-12-02 | 2015-12-02 |  | 2015-12-02 | 2015-12-02 | 0d | 119.8d | 0d |  |  |  |  |
| 84 | 6.9.11.2 | Acceptance of Expected Results | milestone | 0d | 2015-12-02 | 2015-12-02 |  | 2015-12-02 | 2015-12-02 | 0d | 119.8d | 0d |  |  |  |  |
| 85 | 6.9.11.3 | Configuration |  | 3d | 2015-12-02 | 2015-12-07 | 83, 84 | 2015-12-02 | 2015-12-07 | 3d | 119.8d | 0d | Configuration Specialist 1 | 24h | 2,400 | 2,400 |
| 86 | 6.9.11.4 | UT |  | 1d | 2015-12-07 | 2015-12-08 | 85 | 2015-12-07 | 2015-12-08 | 1d | 119.8d | 0d | Configuration Specialist 1 | 8h | 800 | 800 |
| 87 | 6.9.11.5 | Migration to UAT |  | 1d | 2015-12-08 | 2015-12-09 | 86 | 2015-12-08 | 2015-12-09 | 1d | 119.8d | 0d |  |  |  |  |
| 88 | 6.9.11.6 | SIT Testing Support |  | 3d | 2015-12-14 | 2015-12-17 | 87FS+3d | 2015-12-14 | 2015-12-17 | 3d | 119.8d | 0d | Configuration Specialist 1 | 24h | 2,400 | 2,400 |
| 89 | 6.9.12 | **Schedule HCH** |  | 12.8d | 2015-12-17 | 2016-01-04 | 74 | 2015-12-17 | 2016-01-04 | 12.8d | 160d |  |  | 56h | 5,600 | 5,600 |
| 90 | 6.9.12.1 | Acceptance of Requirements | milestone | 0d | 2015-12-17 | 2015-12-17 |  | 2015-12-17 | 2015-12-17 | 0d | 161.8d | 0d |  |  |  |  |
| 91 | 6.9.12.2 | Acceptance of Expected Results | milestone | 0d | 2015-12-17 | 2015-12-17 |  | 2015-12-17 | 2015-12-17 | 0d | 161.8d | 0d |  |  |  |  |
| 92 | 6.9.12.3 | Configuration |  | 3d | 2015-12-17 | 2015-12-22 | 90, 91 | 2015-12-17 | 2015-12-22 | 3d | 161.8d | 0d | Configuration Specialist 2 | 24h | 2,400 | 2,400 |
| 93 | 6.9.12.4 | UT |  | 1d | 2015-12-22 | 2015-12-23 | 92 | 2015-12-22 | 2015-12-23 | 1d | 161.8d | 0d | Configuration Specialist 2 | 8h | 800 | 800 |
| 94 | 6.9.12.5 | Migration to UAT |  | 1d | 2015-12-23 | 2015-12-24 | 93 | 2015-12-23 | 2015-12-24 | 1d | 161.8d | 1.8d |  |  |  |  |
| 95 | 6.9.12.6 | SIT Testing Support |  | 3d | 2015-12-31 | 2016-01-04 | 94FS+3d | 2015-12-31 | 2016-01-04 | 3d | 160d | 9.2d | Configuration Specialist 2 | 24h | 2,400 | 2,400 |
| 96 | 6.9.13 | **Schedule HCK** |  | 11d | 2015-12-17 | 2016-01-01 | 81 | 2015-12-17 | 2016-01-01 | 11d | 161.8d |  |  | 56h | 5,600 | 5,600 |
| 97 | 6.9.13.1 | Acceptance of Requirements | milestone | 0d | 2015-12-17 | 2015-12-17 |  | 2015-12-17 | 2015-12-17 | 0d | 161.8d | 0d |  |  |  |  |
| 98 | 6.9.13.2 | Acceptance of Expected Results | milestone | 0d | 2015-12-17 | 2015-12-17 |  | 2015-12-17 | 2015-12-17 | 0d | 161.8d | 0d |  |  |  |  |
| 99 | 6.9.13.3 | Configuration |  | 3d | 2015-12-17 | 2015-12-22 | 97, 98 | 2015-12-17 | 2015-12-22 | 3d | 161.8d | 0d | Configuration Specialist 3 | 24h | 2,400 | 2,400 |
| 100 | 6.9.13.4 | UT |  | 1d | 2015-12-22 | 2015-12-23 | 99 | 2015-12-22 | 2015-12-23 | 1d | 161.8d | 0d | Configuration Specialist 3 | 8h | 800 | 800 |
| 101 | 6.9.13.5 | Migration to UAT |  | 1d | 2015-12-23 | 2015-12-24 | 100 | 2015-12-23 | 2015-12-24 | 1d | 161.8d | 0d |  |  |  |  |
| 102 | 6.9.13.6 | SIT Testing Support |  | 3d | 2015-12-29 | 2016-01-01 | 101FS+3d | 2015-12-29 | 2016-01-01 | 3d | 161.8d | 11d | Configuration Specialist 3 | 24h | 2,400 | 2,400 |
| 103 | 6.9.14 | **Schedule HCQ** |  | 11d | 2015-12-17 | 2016-01-01 | 88 | 2015-12-17 | 2016-01-01 | 11d | 119.8d |  |  | 56h | 5,600 | 5,600 |
| 104 | 6.9.14.1 | Acceptance of Requirements | milestone | 0d | 2015-12-17 | 2015-12-17 |  | 2015-12-17 | 2015-12-17 | 0d | 119.8d | 0d |  |  |  |  |
| 105 | 6.9.14.2 | Acceptance of Expected Results | milestone | 0d | 2015-12-17 | 2015-12-17 |  | 2015-12-17 | 2015-12-17 | 0d | 119.8d | 0d |  |  |  |  |
| 106 | 6.9.14.3 | Configuration |  | 3d | 2015-12-17 | 2015-12-22 | 104, 105 | 2015-12-17 | 2015-12-22 | 3d | 119.8d | 0d | Configuration Specialist 1 | 24h | 2,400 | 2,400 |
| 107 | 6.9.14.4 | UT |  | 1d | 2015-12-22 | 2015-12-23 | 106 | 2015-12-22 | 2015-12-23 | 1d | 119.8d | 0d | Configuration Specialist 1 | 8h | 800 | 800 |
| 108 | 6.9.14.5 | Migration to UAT |  | 1d | 2015-12-23 | 2015-12-24 | 107 | 2015-12-23 | 2015-12-24 | 1d | 119.8d | 0d |  |  |  |  |
| 109 | 6.9.14.6 | SIT Testing Support |  | 3d | 2015-12-29 | 2016-01-01 | 108FS+3d | 2015-12-29 | 2016-01-01 | 3d | 119.8d | 0d | Configuration Specialist 1 | 24h | 2,400 | 2,400 |

| ID | WBS | Task | Type | Duration | Start | Finish | Predecessors | Baseline start | Baseline finish | Baseline duration | Total slack | Free slack | Constraint | Resources | Work | Cost | Baseline cost |
| --- | --- | --- | --- | --- | --- | --- | --- | --- | --- | --- | --- | --- | --- | --- | --- | --- | --- |
| 110 | 6.9.15 | **Schedule HCR (RWA)** |  | 11d | 2016-01-01 | 2016-01-18 | 109 | 2016-01-01 | 2016-01-18 | 11d | 119.8d |  |  |  | 56h | 5,600 | 5,600 |
| 111 | 6.9.15.1 | Acceptance of Requirements | milestone | 0d | 2016-01-01 | 2016-01-01 |  | 2016-01-01 | 2016-01-01 | 0d | 119.8d | 0d |  |  |  |  |  |
| 112 | 6.9.15.2 | Acceptance of Expected Results | milestone | 0d | 2016-01-01 | 2016-01-01 |  | 2016-01-01 | 2016-01-01 | 0d | 119.8d | 0d |  |  |  |  |  |
| 113 | 6.9.15.3 | Configuration |  | 3d | 2016-01-01 | 2016-01-06 | 111, 112 | 2016-01-01 | 2016-01-06 | 3d | 119.8d | 0d |  | Configuration Specialist 1 | 24h | 2,400 | 2,400 |
| 114 | 6.9.15.4 | UT |  | 1d | 2016-01-06 | 2016-01-07 | 113 | 2016-01-06 | 2016-01-07 | 1d | 119.8d | 0d |  | Configuration Specialist 1 | 8h | 800 | 800 |
| 115 | 6.9.15.5 | Migration to UAT |  | 1d | 2016-01-07 | 2016-01-08 | 114 | 2016-01-07 | 2016-01-08 | 1d | 119.8d | 0d |  |  |  |  |  |
| 116 | 6.9.15.6 | SIT Testing Support |  | 3d | 2016-01-13 | 2016-01-18 | 115FS+3d | 2016-01-13 | 2016-01-18 | 3d | 119.8d | 0d |  | Configuration Specialist 1 | 24h | 2,400 | 2,400 |
| 117 | 6.9.16 | FR-Y9C Consolidated E2E Testing |  | 10d | 2016-01-18 | 2016-02-01 | 109, 102, 95, 88, 81, 74, 67, 60, 53, 46, 39, 32, 25, 13, 116 | 2016-01-18 | 2016-02-01 | 10d | 150.8d | 0d |  | Configuration Specialist 1 | 80h | 8,000 | 8,000 |
| 118 | 6.10 | **Custom Reports** |  | 22d | 2016-01-18 | 2016-02-17 |  | 2016-01-18 | 2016-02-17 | 22d | 190.8d |  |  |  |  |  |  |
| 119 | 6.10.1 | Reconciliation Report |  | 4d | 2016-02-01 | 2016-02-05 | 117 | 2016-02-01 | 2016-02-05 | 4d | 190.8d | 0d |  |  |  |  |  |
| 120 | 6.10.2 | Orphan Report |  | 4d | 2016-02-05 | 2016-02-11 | 119 | 2016-02-05 | 2016-02-11 | 4d | 190.8d | 0d |  |  |  |  |  |
| 121 | 6.10.3 | Variance Report |  | 4d | 2016-02-11 | 2016-02-17 | 120 | 2016-02-11 | 2016-02-17 | 4d | 190.8d |  |  |  |  |  |  |
| 122 | 6.10.4 | Custom Report 4 |  | 4d | 2016-01-18 | 2016-01-22 | 116 | 2016-01-18 | 2016-01-22 | 4d | 208.8d |  |  |  |  |  |  |
| 123 | 7 | **Reports 9LP, 009, 009a** |  | 62d | 2016-01-18 | 2016-04-13 |  | 2016-01-18 | 2016-04-13 | 62d | 119.8d |  |  |  | 1088h | 108,800 | 108,800 |
| 124 | 7.1 | Receipt of Requirements (9LP, 009, 009a) | manual | 1d | 2016-01-18 | 2016-01-19 |  | 2016-01-18 | 2016-01-19 | 1d |  |  | start no earlier than 2015-12-31 |  |  |  |  |
| 125 | 7.2 | Receipt of Test Data (9LP, 009, 009a) | manual | 1d | 2016-01-18 | 2016-01-19 |  | 2016-01-18 | 2016-01-19 | 1d |  |  | start no earlier than 2015-12-31 |  |  |  |  |
| 126 | 7.3 | FRY-9LP Configuration and unit testing |  | 21d | 2016-02-01 | 2016-03-01 | 117 | 2016-02-01 | 2016-03-01 | 21d | 181.8d |  |  | Configuration Specialist 3 | 168h | 16,800 | 16,800 |
| 127 | 7.4 | FR-Y9C, FRY-9LP Consolidated report testing support |  | 50d | 2016-02-03 | 2016-04-13 | 117FS+2d | 2016-02-03 | 2016-04-13 | 50d | 150.8d |  | start no earlier than 2015-12-01 | Configuration Specialist 1 | 400h | 40,000 | 40,000 |
| 128 | 7.5 | FFIEC 009 Configuration and unit testing |  | 40d | 2016-01-18 | 2016-03-14 | 116 | 2016-01-18 | 2016-03-14 | 40d | 119.8d | 0d | start no earlier than 2015-10-01 | Configuration Specialist 2 | 320h | 32,000 | 32,000 |
| 129 | 7.6 | FFIEC 009a Configuration and unit testing |  | 5d | 2016-03-09 | 2016-03-16 | 116FS+37d | 2016-03-09 | 2016-03-16 | 5d | 170.8d |  |  | Configuration Specialist 3 | 40h | 4,000 | 4,000 |
| 130 | 7.7 | FFIEC 009/009a Consolidated report testing support |  | 20d | 2016-03-16 | 2016-04-13 | 128FS+2d | 2016-03-16 | 2016-04-13 | 20d | 119.8d | 0d |  | Configuration Specialist 3 | 160h | 16,000 | 16,000 |
| 131 | 8 | **Q1 Production testing support (DR1)** |  | 29d | 2016-04-15 | 2016-05-26 | 130FS+2d | 2016-04-15 | 2016-05-26 | 29d | 119.8d |  |  |  | 336.4h | 34,568 | 34,568 |
| 132 | 8.1 | Project Manager |  | 29d | 2016-04-15 | 2016-05-26 | 130FS+2d | 2016-04-15 | 2016-05-26 | 29d | 119.8d |  | start no earlier than 2016-04-01 | PM [10%] | 23.2h | 2,784 | 2,784 |
| 133 | 8.2 | Implementation Lead |  | 29d | 2016-04-15 | 2016-05-26 | 130FS+2d | 2016-04-15 | 2016-05-26 | 29d | 119.8d |  | start no earlier than 2016-04-01 | Implementation Lead [25%] | 58h | 5,800 | 5,800 |
| 134 | 8.3 | SME |  | 29d | 2016-04-15 | 2016-05-26 | 130FS+2d | 2016-04-15 | 2016-05-26 | 29d | 119.8d |  | start no earlier than 2016-04-01 | SME [10%] | 23.2h | 2,784 | 2,784 |
| 135 | 8.4 | Configuration Specialist |  | 29d | 2016-04-15 | 2016-05-26 | 130FS+2d | 2016-04-15 | 2016-05-26 | 29d | 119.8d |  | start no earlier than 2016-04-04 | Configuration Specialist 2 | 232h | 23,200 | 23,200 |

| ID | WBS | Task | Duration | Start | Finish | Baseline start | Baseline finish | Baseline duration | Total slack | Constraint | Resources | Work | Cost | Baseline cost |
| --- | --- | --- | --- | --- | --- | --- | --- | --- | --- | --- | --- | --- | --- | --- |
| 136 | 9 | **Q2 Production testing support (DR2)** | 28d | 2016-07-01 | 2016-08-09 | 2016-07-01 | 2016-08-09 | 28d |  |  |  | 284h | 29,200 | 29,200 |
| 137 | 9.1 | Project Manager | 25d | 2016-07-01 | 2016-08-04 | 2016-07-01 | 2016-08-04 | 25d | 69d | start no earlier than 2016-07-01 | PM [10%] | 20h | 2,400 | 2,400 |
| 138 | 9.2 | Implementation Lead | 25d | 2016-07-01 | 2016-08-04 | 2016-07-01 | 2016-08-04 | 25d | 69d | start no earlier than 2016-07-01 | Implementation Lead [10%] | 20h | 2,000 | 2,000 |
| 139 | 9.3 | SME | 25d | 2016-07-01 | 2016-08-04 | 2016-07-01 | 2016-08-04 | 25d | 69d | start no earlier than 2016-07-01 | SME [10%] | 20h | 2,400 | 2,400 |
| 140 | 9.4 | Configuration Specialist | 28d | 2016-07-01 | 2016-08-09 | 2016-07-01 | 2016-08-09 | 28d | 66d | start no earlier than 2016-07-01 | Configuration Specialist 1 | 224h | 22,400 | 22,400 |
| 141 | 10 | **Q3 Production support (Fed Filing)** | 28d | 2016-10-03 | 2016-11-09 | 2016-10-03 | 2016-11-09 | 28d |  |  |  | 376h | 38,400 | 38,400 |
| 142 | 10.1 | Project Manager | 25d | 2016-10-03 | 2016-11-04 | 2016-10-03 | 2016-11-04 | 25d | 3d | start no earlier than 2016-10-03 | PM [10%] | 20h | 2,400 | 2,400 |
| 143 | 10.2 | Implementation Lead | 28d | 2016-10-03 | 2016-11-09 | 2016-10-03 | 2016-11-09 | 28d | 0d | start no earlier than 2016-10-03 | Implementation Lead [50%] | 112h | 11,200 | 11,200 |
| 144 | 10.3 | SME | 25d | 2016-10-03 | 2016-11-04 | 2016-10-03 | 2016-11-04 | 25d | 3d | start no earlier than 2016-10-03 | SME [10%] | 20h | 2,400 | 2,400 |
| 145 | 10.4 | Configuration Specialist | 28d | 2016-10-03 | 2016-11-09 | 2016-10-03 | 2016-11-09 | 28d | 0d | start no earlier than 2016-10-03 | Configuration Specialist 1 | 224h | 22,400 | 22,400 |
