# Residential Construction

Schedule from MS Project, 2025-01-15 to 2025-08-14.

## Calendars

- Standard: Mon-Fri 08:00-12:00, 13:00-17:00; Sat-Sun off.

## Resources

| Resource |
| --- |
| Concrete contractor |
| Finish carpentry contractor |
| Fencing contractor |
| Masonry contractor |
| General contractor |
| Architect |
| Owner |
| Mortgage lender |
| Inspector |
| Electric company |
| Site excavation contractor |
| Electric contractor |
| Plumbing contractor |
| Framing contractor |
| Roofing contractor |
| Heating and AC contractor |
| Insulation contractor |
| Drywall contractor |
| Painting contractor |
| Flooring contractor |
| Appliance contractor |
| Landscape contractor |
| Maid service |

## Schedule

| ID | WBS | Task | Type | Duration | Start | Finish | Predecessors | Total slack | Resources | Work |
| --- | --- | --- | --- | --- | --- | --- | --- | --- | --- | --- |
| 1 | 1 | **General Conditions** |  | 21d | 2025-01-15 | 2025-02-12 |  | 0d |  | 230.4h |
| 2 | 1.1 | Finalize plans and develop estimate with owner, architect |  | 20d | 2025-01-15 | 2025-02-11 |  | 0d | General contractor [50%]; Architect [50%]; Owner [12%]; Mortgage lender [12%] | 198.4h |
| 3 | 1.2 | Sign contract and notice to proceed |  | 1d | 2025-02-12 | 2025-02-12 | 2 | 0d | General contractor; Architect; Owner; Mortgage lender | 32h |
| 4 | 1.3 | **Apply for Permits** |  | 0d | 2025-02-12 | 2025-02-12 |  | 0d |  |  |
| 5 | 1.3.1 | Secure foundation permit | milestone | 0d | 2025-02-12 | 2025-02-12 | 3 | 0d | General contractor |  |
| 6 | 1.3.2 | Secure framing permit | milestone | 0d | 2025-02-12 | 2025-02-12 | 3 | 0d | General contractor |  |
| 7 | 1.3.3 | Secure electrical permit | milestone | 0d | 2025-02-12 | 2025-02-12 | 3 | 0d | General contractor |  |
| 8 | 1.3.4 | Secure plumbing permit | milestone | 0d | 2025-02-12 | 2025-02-12 | 3 | 0d | General contractor |  |
| 9 | 1.3.5 | Secure HVAC permit | milestone | 0d | 2025-02-12 | 2025-02-12 | 3 | 0d | General contractor |  |
| 10 | 1.3.6 | Secure miscellaneous permits | milestone | 0d | 2025-02-12 | 2025-02-12 | 3 | 0d | General contractor |  |
| 11 | 2 | **Site Work** |  | 3d | 2025-02-13 | 2025-02-17 |  | 0d |  | 32h |
| 12 | 2.1 | Clear and grub lot |  | 1d | 2025-02-13 | 2025-02-13 | 5, 6, 7, 8, 10, 9 | 0d | Site excavation contractor | 8h |
| 13 | 2.2 | Install temporary power service |  | 1d | 2025-02-14 | 2025-02-14 | 12 | 0d | Electric company | 8h |
| 14 | 2.3 | Install underground utilities |  | 1d | 2025-02-17 | 2025-02-17 | 13 | 0d | Electric contractor; Plumbing contractor | 16h |
| 15 | 3 | **Foundation** |  | 42d | 2025-02-18 | 2025-04-16 |  | 0d |  | 280h |
| 16 | 3.1 | Excavate for foundations |  | 3d | 2025-02-18 | 2025-02-20 | 14 | 0d | Site excavation contractor | 24h |
| 17 | 3.2 | Form basement walls |  | 13d | 2025-02-21 | 2025-03-11 | 16 | 0d | Concrete contractor | 104h |
| 18 | 3.3 | Place concrete for foundations & basement walls |  | 12d | 2025-03-12 | 2025-03-27 | 17 | 0d | Concrete contractor | 96h |
| 19 | 3.4 | Cure basement walls for 7 days |  | 7d | 2025-03-28 | 2025-04-07 | 18 | 0d |  |  |
| 20 | 3.5 | Strip basement wall forms |  | 2d | 2025-04-08 | 2025-04-09 | 19 | 0d | Concrete contractor | 16h |
| 21 | 3.6 | Waterproof/insulate basement walls |  | 2d | 2025-04-10 | 2025-04-11 | 20 | 0d | Concrete contractor | 16h |
| 22 | 3.7 | Perform foundation inspection |  | 1d | 2025-04-14 | 2025-04-14 | 21, 16 | 0d | Inspector | 8h |
| 23 | 3.8 | Backfill foundation |  | 2d | 2025-04-15 | 2025-04-16 | 22 | 0d | Site excavation contractor | 16h |
| 24 | 4 | **Framing** |  | 22d | 2025-04-17 | 2025-05-16 |  | 0d |  | 176h |
| 25 | 4.1 | Install 1st floor joists |  | 2d | 2025-04-17 | 2025-04-18 | 23 | 0d | Framing contractor | 16h |
| 26 | 4.2 | Lay 1st floor decking |  | 2d | 2025-04-21 | 2025-04-22 | 25 | 0d | Framing contractor | 16h |
| 27 | 4.3 | Frame 1st floor walls |  | 4d | 2025-04-23 | 2025-04-28 | 26 | 0d | Framing contractor | 32h |
| 28 | 4.4 | Frame 1st floor corners |  | 1d | 2025-04-29 | 2025-04-29 | 27 | 0d | Framing contractor | 8h |
| 29 | 4.5 | Install 2nd floor joists |  | 2d | 2025-04-30 | 2025-05-01 | 28 | 0d | Framing contractor | 16h |
| 30 | 4.6 | Frame 2nd floor decking |  | 2d | 2025-05-02 | 2025-05-05 | 29 | 0d | Framing contractor | 16h |
| 31 | 4.7 | Frame 2nd floor walls |  | 3d | 2025-05-06 | 2025-05-08 | 30 | 0d | Framing contractor | 24h |
| 32 | 4.8 | Frame 2nd floor corners |  | 2d | 2025-05-09 | 2025-05-12 | 31 | 0d | Framing contractor | 16h |
| 33 | 4.9 | Complete roof framing |  | 3d | 2025-05-13 | 2025-05-15 | 32 | 0d | Framing contractor | 24h |
| 34 | 4.10 | Conduct framing inspection |  | 1d | 2025-05-16 | 2025-05-16 | 33 | 0d | Inspector | 8h |

| ID | WBS | Task | Duration | Start | Finish | Predecessors | Total slack | Free slack | Resources | Work |
| --- | --- | --- | --- | --- | --- | --- | --- | --- | --- | --- |
| 35 | 5 | **Dry In** | 22d | 2025-05-16 | 2025-06-16 |  | 0d |  |  | 152h |
| 36 | 5.1 | Install 1st floor sheathing | 3d | 2025-05-19 | 2025-05-21 | 34 | 0d |  | Framing contractor | 24h |
| 37 | 5.2 | Install 2nd floor sheathing | 3d | 2025-05-22 | 2025-05-26 | 36 | 0d |  | Framing contractor | 24h |
| 38 | 5.3 | Install roof decking | 3d | 2025-05-16 | 2025-05-20 | 33 | 4d | 0d | Framing contractor | 24h |
| 39 | 5.4 | Install felt, flashing and shingles | 3d | 2025-06-03 | 2025-06-05 | 47 | 0d |  | Roofing contractor | 24h |
| 40 | 5.5 | Hang 1st floor exterior doors | 1d | 2025-06-06 | 2025-06-06 | 39 | 0d |  | Framing contractor | 8h |
| 41 | 5.6 | Install 1st floor windows | 3d | 2025-06-09 | 2025-06-11 | 40 | 0d |  | Framing contractor | 24h |
| 42 | 5.7 | Install 2nd floor windows | 3d | 2025-06-12 | 2025-06-16 | 41 | 0d |  | Framing contractor | 24h |
| 43 | 6 | **Exterior Finishes** | 19d | 2025-06-17 | 2025-07-11 |  | 5d |  |  | 152h |
| 44 | 6.1 | Complete exterior brick | 16d | 2025-06-17 | 2025-07-08 | 42 | 5d | 0d | Masonry contractor | 128h |
| 45 | 6.2 | Complete exterior siding | 3d | 2025-07-09 | 2025-07-11 | 44 | 5d | 0d | Framing contractor | 24h |
| 46 | 7 | **Utility Rough-B97Ins and Complete Concrete** | 21d | 2025-05-21 | 2025-06-18 |  | 4d |  |  | 232h |
| 47 | 7.1 | Rough-in plumbing | 5d | 2025-05-27 | 2025-06-02 | 38, 37 | 0d |  | Plumbing contractor | 40h |
| 48 | 7.2 | Conduct rough-in plumbing inspection | 1d | 2025-06-03 | 2025-06-03 | 47 | 20d | 0d | Inspector | 8h |
| 49 | 7.3 | Place concrete for basement floor | 11d | 2025-06-04 | 2025-06-18 | 48 | 33d |  | Concrete contractor | 88h |
| 50 | 7.4 | Rough-in electrical | 5d | 2025-05-27 | 2025-06-02 | 38, 37 | 6d | 0d | Electric contractor | 40h |
| 51 | 7.5 | Conduct rough-in electrical inspection | 1d | 2025-06-03 | 2025-06-03 | 50 | 6d | 0d | Inspector | 8h |
| 52 | 7.6 | Rough-in HVAC | 3d | 2025-06-04 | 2025-06-06 | 51 | 6d | 0d | Heating and AC contractor | 24h |
| 53 | 7.7 | Conduct rough-in HVAC inspection | 1d | 2025-06-09 | 2025-06-09 | 52 | 24d |  | Inspector | 8h |
| 54 | 7.8 | Rough-in communication - phone, cable, computer, alarm | 2d | 2025-05-21 | 2025-05-22 | 38 | 17d |  | Electric contractor | 16h |
| 55 | 8 | **Interior Finishes** | 30d | 2025-06-17 | 2025-07-28 |  | 0d |  |  | 408h |
| 56 | 8.1 | **Insulation** | 11d | 2025-06-17 | 2025-07-01 |  | 0d |  |  | 32h |
| 57 | 8.1.1 | Place wall insulation - 1st floor | 1d | 2025-06-17 | 2025-06-17 | 36, 42, 54, 52, 50, 37 | 0d |  | Insulation contractor | 8h |
| 58 | 8.1.2 | Place wall insulation - 2nd floor | 1d | 2025-06-18 | 2025-06-18 | 57 | 27d | 3d | Insulation contractor | 8h |
| 59 | 8.1.3 | Place ceiling insulation - 2nd floor | 1d | 2025-06-30 | 2025-06-30 | 65, 58 | 24d | 0d | Insulation contractor | 8h |
| 60 | 8.1.4 | Conduct insulation inspection | 1d | 2025-07-01 | 2025-07-01 | 59 | 24d |  | Inspector | 8h |

| ID | WBS | Task | Duration | Start | Finish | Predecessors | Total slack | Free slack | Resources | Work |
| --- | --- | --- | --- | --- | --- | --- | --- | --- | --- | --- |
| 61 | 8.2 | **Drywall** | 9d | 2025-06-18 | 2025-06-30 |  | 0d |  |  | 80h |
| 62 | 8.2.1 | Install drywall - 1st floor walls | 2d | 2025-06-18 | 2025-06-19 | 57 | 0d |  | Drywall contractor | 16h |
| 63 | 8.2.2 | Install drywall - 1st floor overhead | 2d | 2025-06-20 | 2025-06-23 | 62 | 0d |  | Drywall contractor | 16h |
| 64 | 8.2.3 | Install drywall 2nd floor walls | 2d | 2025-06-24 | 2025-06-25 | 63, 58 | 24d | 0d | Drywall contractor | 16h |
| 65 | 8.2.4 | Install drywall 2nd floor overhead | 2d | 2025-06-26 | 2025-06-27 | 64 | 24d | 0d | Drywall contractor | 16h |
| 66 | 8.2.5 | Tape and float 1st floor drywall | 1d | 2025-06-24 | 2025-06-24 | 63 | 0d |  | Drywall contractor | 8h |
| 67 | 8.2.6 | Tape and float 2nd floor drywall | 1d | 2025-06-30 | 2025-06-30 | 65, 66 | 33d |  | Drywall contractor | 8h |
| 68 | 8.3 | **Paint and Wallpaper** | 17d | 2025-06-25 | 2025-07-17 |  | 0d |  |  | 72h |
| 69 | 8.3.1 | Texture all except entry and kitchen - 1st floor | 1d | 2025-06-25 | 2025-06-25 | 66 | 0d |  | Painting contractor | 8h |
| 70 | 8.3.2 | Paint all except entry and kitchen - 1st floor | 1d | 2025-06-26 | 2025-06-26 | 69 | 0d |  | Painting contractor | 8h |
| 71 | 8.3.3 | Hang wallpaper entry and kitchen - 1st floor | 1d | 2025-06-27 | 2025-06-27 | 70 | 0d |  | Painting contractor | 8h |
| 72 | 8.3.4 | Texture all - 2nd floor | 1d | 2025-06-26 | 2025-06-26 | 69 | 34d | 0d | Painting contractor | 8h |
| 73 | 8.3.5 | Paint all - 2nd floor | 1d | 2025-06-27 | 2025-06-27 | 72 | 34d |  | Painting contractor | 8h |
| 74 | 8.3.6 | Paint exterior siding & trim work | 4d | 2025-07-14 | 2025-07-17 | 45 | 5d | 0d | Painting contractor | 32h |
| 75 | 8.4 | **Cabinets** | 6d | 2025-06-30 | 2025-07-07 |  | 0d |  |  | 48h |
| 76 | 8.4.1 | Install 1st floor - kitchen cabinets | 2d | 2025-06-30 | 2025-07-01 | 71 | 0d |  | Finish carpentry contractor | 16h |
| 77 | 8.4.2 | Install 1st floor - master bath and guest cabinets | 1d | 2025-07-02 | 2025-07-02 | 76 | 0d |  | Finish carpentry contractor | 8h |
| 78 | 8.4.3 | Install 2nd floor - hall bath and private bath cabinets | 1d | 2025-07-03 | 2025-07-03 | 77 | 1d | 0d | Finish carpentry contractor | 8h |
| 79 | 8.4.4 | Install chair rails, crown moldings, trim | 2d | 2025-07-04 | 2025-07-07 | 78 | 20d |  | Finish carpentry contractor | 16h |
| 80 | 8.5 | **Finish Plumbing** | 6d | 2025-07-02 | 2025-07-09 |  | 0d |  |  | 48h |
| 81 | 8.5.1 | Complete 1st floor - kitchen plumbing | 1d | 2025-07-02 | 2025-07-02 | 76, 48 | 0d |  | Plumbing contractor | 8h |
| 82 | 8.5.2 | Complete 1st floor - master bath and guest plumbing | 2d | 2025-07-03 | 2025-07-04 | 81, 77 | 0d |  | Plumbing contractor | 16h |
| 83 | 8.5.3 | Complete 2nd floor - hall bath and private bath plumbing | 2d | 2025-07-07 | 2025-07-08 | 82, 78 | 0d |  | Plumbing contractor | 16h |
| 84 | 8.5.4 | Conduct finish plumbing inspection | 1d | 2025-07-09 | 2025-07-09 | 83 | 0d |  | Inspector | 8h |

| ID | WBS | Task | Duration | Start | Finish | Predecessors | Total slack | Free slack | Resources | Work |
| --- | --- | --- | --- | --- | --- | --- | --- | --- | --- | --- |
| 85 | 8.6 | **Finish Electrical** | 3d | 2025-07-09 | 2025-07-11 |  | 1d |  |  | 40h |
| 86 | 8.6.1 | Complete 1st floor circuits to service panel | 1d | 2025-07-09 | 2025-07-09 | 83, 51 | 3d | 0d | Electric contractor | 8h |
| 87 | 8.6.2 | Complete 2nd floor circuits to service panel | 1d | 2025-07-10 | 2025-07-10 | 86 | 3d | 0d | Electric contractor | 8h |
| 88 | 8.6.3 | Conduct finish electrical inspection | 1d | 2025-07-11 | 2025-07-11 | 87 | 3d |  | Inspector | 8h |
| 89 | 8.6.4 | Complete communications wiring - phone, cable, computer, alarm | 2d | 2025-07-10 | 2025-07-11 | 84 | 0d |  | Electric contractor | 16h |
| 90 | 8.7 | **Finish HVAC** | 3d | 2025-07-14 | 2025-07-16 |  | 0d |  |  | 24h |
| 91 | 8.7.1 | Complete 1st floor - zone 1 HVAC | 1d | 2025-07-14 | 2025-07-14 | 89, 53 | 0d |  | Heating and AC contractor | 8h |
| 92 | 8.7.2 | Complete 2nd floor - zone 2 HVAC | 1d | 2025-07-15 | 2025-07-15 | 91 | 0d |  | Heating and AC contractor | 8h |
| 93 | 8.7.3 | Conduct HVAC inspection | 1d | 2025-07-16 | 2025-07-16 | 92 | 0d |  | Inspector | 8h |
| 94 | 8.8 | **Carpet, Tile and Appliances** | 8d | 2025-07-17 | 2025-07-28 |  | 0d |  |  | 64h |
| 95 | 8.8.1 | Tile entry, kitchen and baths | 3d | 2025-07-17 | 2025-07-21 | 88, 93 | 0d |  | Flooring contractor | 24h |
| 96 | 8.8.2 | Carpet 1st floor | 2d | 2025-07-22 | 2025-07-23 | 95 | 0d |  | Flooring contractor | 16h |
| 97 | 8.8.3 | Carpet 2nd floor | 2d | 2025-07-24 | 2025-07-25 | 96 | 0d |  | Flooring contractor | 16h |
| 98 | 8.8.4 | Install appliances | 1d | 2025-07-28 | 2025-07-28 | 97 | 0d |  | Appliance contractor | 8h |
| 99 | 9 | **Landscaping and Grounds Work** | 12d | 2025-07-18 | 2025-08-04 |  | 0d |  |  | 56h |
| 100 | 9.1 | Pour concrete driveway and sidewalks | 2d | 2025-07-18 | 2025-07-21 | 74 | 5d |  | Concrete contractor | 16h |
| 101 | 9.2 | Install backyard fence | 2d | 2025-07-29 | 2025-07-30 | 98, 100 | 0d |  | Fencing contractor | 16h |
| 102 | 9.3 | Sod and complete plantings - front yard | 2d | 2025-07-31 | 2025-08-01 | 101 | 0d |  | Landscape contractor | 16h |
| 103 | 9.4 | Sod and complete plantings - backyard | 1d | 2025-08-04 | 2025-08-04 | 102 | 0d |  | Landscape contractor | 8h |
| 104 | 10 | **Final Acceptance** | 8d | 2025-08-05 | 2025-08-14 |  | 0d |  |  | 64h |
| 105 | 10.1 | Complete final inspection for certificate of occupancy | 1d | 2025-08-05 | 2025-08-05 | 103, 93, 88, 84, 60, 79, 49 | 0d |  | Inspector | 8h |
| 106 | 10.2 | Cleanup for occupancy | 1d | 2025-08-06 | 2025-08-06 | 98, 105 | 0d |  | Maid service | 8h |
| 107 | 10.3 | Perform final walk-through inspection | 1d | 2025-08-07 | 2025-08-07 | 106 | 0d |  | Owner | 8h |
| 108 | 10.4 | Complete punch list items | 5d | 2025-08-08 | 2025-08-14 | 107 | 0d |  | General contractor | 40h |
